# ipuatsons-WBS

How a schedule from MS Project changed from version to version. A marks actual dates.

## Version 1 (saved 2022-08-28, file ipuatsons-WBS.mpp)

Note of the change: add micrososft project file

| ID | WBS | Task | Duration | Start | Finish | Predecessors | Total float |
| --- | --- | --- | --- | --- | --- | --- | --- |
| 1 | 1 | **Requirement Analysis** | 7d | 2022-08-01 | 2022-08-09 |  |  |
| 2 | 1.1 | **Develop Project Title** | 4d | 2022-08-01 | 2022-08-04 |  | 0d |
| 3 |  | กำหนดจุดมุ่งหมายและขอบเขตการทำงาน | 1d | 2022-08-01 | 2022-08-01 |  | 3d |
| 4 |  | Develop, Review, Approval - Project Title | 4d | 2022-08-01 | 2022-08-04 |  | 0d |
| 5 | 1.2 | **Develop Preliminary Project Scope Statement** | 3d | 2022-08-05 | 2022-08-09 | 2 | 0d |
| 6 |  | กำหนด Functional Requirements | 3d | 2022-08-05 | 2022-08-09 |  | 0d |
| 7 |  | กำหนด Non Functional Requirements | 3d | 2022-08-05 | 2022-08-09 |  | 0d |
| 8 |  | กำหนดระยะเวลาการทำงาน | 1d | 2022-08-05 | 2022-08-05 |  | 2d |
| 9 | 2 | **Design Phase** | 5d | 2022-08-09 | 2022-08-16 | 1 | 0d |
| 10 |  | ออกแบบ UX/UI | 5d | 2022-08-10 | 2022-08-16 |  | 0d |
| 11 |  | วาด Use Case Diagram | 3d | 2022-08-10 | 2022-08-12 |  | 2d |
| 12 |  | ออกแบบ Database | 2d | 2022-08-10 | 2022-08-11 |  | 3d |
| 13 |  | ประมวลภาพรวมการออกแบบครั้งที่ 1 | 0.5d | 2022-08-10 | 2022-08-10 |  | 4.5d |
| 14 |  | วาด Object Diagram | 1d | 2022-08-10 | 2022-08-10 |  | 4d |
| 15 |  | วาด Sequence Diagram | 5d | 2022-08-10 | 2022-08-16 |  | 0d |
| 16 |  | ประมวลภาพรวมการออกแบบครั้งที่ 2 | 0.5d | 2022-08-10 | 2022-08-10 |  | 4.5d |
| 17 |  | Design Phase เสร็จสิ้น | 0d | 2022-08-09 | 2022-08-09 |  | 5d |
| 18 | 3 | **Implementation - 1st** | 46d | 2022-08-17 | 2022-10-19 | 9 | 0d |
| 19 | 3.1 | **Tools Study** | 3d | 2022-08-17 | 2022-08-19 | 9 | 0d |
| 20 |  | เรียนรู้เกี่ยวกับ Vuet js | 3d | 2022-08-17 | 2022-08-19 |  | 0d |
| 21 |  | เรียนรู้เกี่ยวกับ Django | 3d | 2022-08-17 | 2022-08-19 |  | 0d |
| 22 |  | เรียนรู้เกี่ยวกับ MongoDB | 2d | 2022-08-17 | 2022-08-18 |  | 1d |
| 23 |  | เรียนรู้เกี่ยวกับ Ubuntu Server | 1d | 2022-08-17 | 2022-08-17 |  | 2d |
| 24 |  | เรียนรู้เกี่ยวกับ Kubernetes | 2d | 2022-08-17 | 2022-08-18 |  | 1d |
| 25 |  | เรียนรู้เกี่ยวกับ Microk8s | 1d | 2022-08-17 | 2022-08-17 |  | 2d |
| 26 |  | เรียนรู้เกี่ยวกับ Docker | 2d | 2022-08-17 | 2022-08-18 |  | 1d |
| 27 |  | เรียนรู้เกี่ยวกับ Nginx | 2d | 2022-08-17 | 2022-08-18 |  | 1d |
| 28 | 3.2 | **Coding Plan** | 1d | 2022-08-22 | 2022-08-22 | 19 | 0d |
| 29 |  | กำหนด Directory ในการทำงาน | 1d | 2022-08-22 | 2022-08-22 |  | 0d |
| 30 |  | กำหนด Version ของ framework และ libary ที่ใช้ | 1d | 2022-08-22 | 2022-08-22 |  | 0d |
| 31 |  | สร้างและตั้งค่า Github | 1d | 2022-08-22 | 2022-08-22 |  | 0d |
| 32 | 3.3 | **Account & Login Page** | 3d | 2022-08-23 | 2022-08-25 | 28 | 0d |
| 33 |  | พัฒนาส่วน Front End | 3d | 2022-08-23 | 2022-08-25 |  | 0d |
| 34 |  | พัฒนาส่วน Backend & API | 3d | 2022-08-23 | 2022-08-25 |  | 0d |
| 35 |  | ทดสอบ | 1d | 2022-08-23 | 2022-08-23 |  | 2d |
| 36 | 3.4 | **Feed Page** | 5d | 2022-08-26 | 2022-09-01 | 32 | 0d |
| 37 |  | พัฒนาส่วน Front End | 5d | 2022-08-26 | 2022-09-01 |  | 0d |
| 38 |  | พัฒนาส่วน Backend & API | 5d | 2022-08-26 | 2022-09-01 |  | 0d |
| 39 |  | ทดสอบ | 0.5d | 2022-08-26 | 2022-08-26 |  | 4.5d |
| 40 | 3.5 | **Drive Page** | 5d | 2022-09-02 | 2022-09-08 | 36 | 0d |
| 41 |  | พัฒนาส่วน Front End | 5d | 2022-09-02 | 2022-09-08 |  | 0d |
| 42 |  | พัฒนาส่วน Backend & API | 5d | 2022-09-02 | 2022-09-08 |  | 0d |
| 43 |  | ทดสอบ | 0.5d | 2022-09-02 | 2022-09-02 |  | 4.5d |
| 44 | 3.6 | **Application Page** | 5d | 2022-09-09 | 2022-09-15 | 40 | 0d |
| 45 |  | พัฒนาส่วน Front End | 5d | 2022-09-09 | 2022-09-15 |  | 0d |
| 46 |  | พัฒนาส่วน Backend & API | 5d | 2022-09-09 | 2022-09-15 |  | 0d |
| 47 |  | ทดสอบ | 0.5d | 2022-09-09 | 2022-09-09 |  | 4.5d |
| 48 | 3.7 | **Setting Page** | 2d | 2022-09-16 | 2022-09-19 | 44 | 0d |
| 49 |  | พัฒนาส่วน Front End | 1d | 2022-09-16 | 2022-09-16 |  | 1d |
| 50 |  | พัฒนาส่วน Backend & API | 2d | 2022-09-16 | 2022-09-19 |  | 0d |
| 51 |  | ทดสอบ | 0.5d | 2022-09-16 | 2022-09-16 |  | 1.5d |
| 52 | 3.8 | **Server** | 5d | 2022-08-23 | 2022-08-29 | 28 | 15d |
| 53 |  | ติดตั้ง Os สำหรับ Server และสร้าง VM | 5d | 2022-08-23 | 2022-08-29 |  | 15d |
| 56 | 3.9 | **1st Test Plan** | 3d | 2022-09-20 | 2022-09-22 | 32, 36, 40, 44, 48, 52 | 0d |
| 57 |  | ทดสอบการเชื่อมต่อกันระหว่าง Web Application และ Server | 2d | 2022-09-20 | 2022-09-21 |  | 1d |
| 58 |  | ประมวลผลการทดสอบ | 3d | 2022-09-20 | 2022-09-22 |  | 0d |
| 59 | 3.10 | **Mock Demo - 1st** | 7d | 2022-09-23 | 2022-10-03 | 56 | 0d |
| 60 |  | ทดสอบการกับกลุ่มผู้ใช้กลุ่มหนึง | 7d | 2022-09-23 | 2022-10-03 |  | 0d |
| 61 |  | ประเมินความพึงพอใจ | 1d | 2022-09-23 | 2022-09-23 |  | 6d |
| 62 | 3.11 | **การปรับปรุงจากผลตอบรับ - 1st** | 5d | 2022-10-04 | 2022-10-10 | 59 | 0d |
| 63 |  | พัฒนาส่วน Front End เพิ่มเติมจากผลการประเมินจากผู้ใช้ | 5d | 2022-10-04 | 2022-10-10 |  | 0d |
| 64 |  | พัฒนาส่วน Backend & API เพิ่มเติมจากผลการประเมินจากผู้ใช้ | 5d | 2022-10-04 | 2022-10-10 |  | 0d |
| 65 |  | ทดสอบ | 0.5d | 2022-10-04 | 2022-10-04 |  | 4.5d |
| 66 | 3.12 | **เอกสารบทที่ 1-3** | 7d | 2022-10-11 | 2022-10-19 | 62 | 0d |
| 67 |  | เขียนเอกสาร | 7d | 2022-10-11 | 2022-10-19 |  | 0d |
| 68 |  | ส่งให้อาจารย์ที่ปรึกษา และ แก้ไข | 7d | 2022-10-11 | 2022-10-19 |  | 0d |
| 69 | 4 | **Implementation - 2nd** | 23d | 2022-10-20 | 2022-11-21 | 18 | 0d |
| 70 | 4.1 | **Application Page - model processing** | 2d | 2022-10-20 | 2022-10-21 | 18 | 0d |
| 71 |  | พัฒนาส่วน Front End | 1d | 2022-10-20 | 2022-10-20 |  | 1d |
| 72 |  | พัฒนาส่วน Backend & API | 2d | 2022-10-20 | 2022-10-21 |  | 0d |

| ID | WBS | Task | Duration | Start | Finish | Predecessors | Total float |
| --- | --- | --- | --- | --- | --- | --- | --- |
| 73 |  | ทดสอบ | 0.5d | 2022-10-20 | 2022-10-20 |  | 1.5d |
| 74 | 4.2 | **Market Place Page** | 2d | 2022-10-24 | 2022-10-25 | 70 | 0d |
| 75 |  | พัฒนาส่วน Front End | 1d | 2022-10-24 | 2022-10-24 |  | 1d |
| 76 |  | พัฒนาส่วน Backend & API | 2d | 2022-10-24 | 2022-10-25 |  | 0d |
| 77 |  | ทดสอบ | 0.5d | 2022-10-24 | 2022-10-24 |  | 1.5d |
| 78 | 4.3 | **Model Uplaod Page** | 2d | 2022-10-24 | 2022-10-25 | 70 | 0d |
| 79 |  | พัฒนาส่วน Front End | 1d | 2022-10-24 | 2022-10-24 |  | 1d |
| 80 |  | พัฒนาส่วน Backend & API | 2d | 2022-10-24 | 2022-10-25 |  | 0d |
| 81 |  | ทดสอบ | 0.5d | 2022-10-24 | 2022-10-24 |  | 1.5d |
| 82 | 4.4 | **Server** | 2d | 2022-10-20 | 2022-10-21 | 18 | 2d |
| 83 |  | พัฒนาส่วน Front End | 1d | 2022-10-20 | 2022-10-20 |  | 3d |
| 84 |  | พัฒนาส่วน Backend & API | 2d | 2022-10-20 | 2022-10-21 |  | 2d |
| 85 |  | ทดสอบ | 0.5d | 2022-10-20 | 2022-10-20 |  | 3.5d |
| 86 | 4.5 | **Mock Demo - 2nd** | 1d | 2022-10-26 | 2022-10-26 | 70, 74, 78, 82 | 0d |
| 87 |  | ทดสอบการกับกลุ่มผู้ใช้กลุ่มหนึง | 1d | 2022-10-26 | 2022-10-26 |  | 0d |
| 88 |  | ประเมินความพึงพอใจ | 1d | 2022-10-26 | 2022-10-26 |  | 0d |
| 89 | 4.6 | **การปรับปรุงจากผลตอบรับ - 2st** | 5d | 2022-10-27 | 2022-11-02 | 86 | 0d |
| 90 |  | พัฒนาส่วน Front End เพิ่มเติมจากผลการประเมินจากผู้ใช้ | 5d | 2022-10-27 | 2022-11-02 |  | 0d |
| 91 |  | พัฒนาส่วน Backend & API เพิ่มเติมจากผลการประเมินจากผู้ใช้ | 5d | 2022-10-27 | 2022-11-02 |  | 0d |
| 92 |  | ทดสอบ | 0.5d | 2022-10-27 | 2022-10-27 |  | 4.5d |
| 93 | 4.7 | **Mock Demo - 3rd** | 1d | 2022-11-03 | 2022-11-03 | 89 | 0d |
| 94 |  | ทดสอบการกับกลุ่มผู้ใช้กลุ่มหนึง | 1d | 2022-11-03 | 2022-11-03 |  | 0d |
| 95 |  | ประเมินความพึงพอใจ | 1d | 2022-11-03 | 2022-11-03 |  | 0d |
| 96 | 4.8 | **การปรับปรุงจากผลตอบรับ - 3rd** | 5d | 2022-11-04 | 2022-11-10 | 93 | 0d |
| 97 |  | พัฒนาส่วน Front End เพิ่มเติมจากผลการประเมินจากผู้ใช้ | 5d | 2022-11-04 | 2022-11-10 |  | 0d |
| 98 |  | พัฒนาส่วน Backend & API เพิ่มเติมจากผลการประเมินจากผู้ใช้ | 5d | 2022-11-04 | 2022-11-10 |  | 0d |
| 99 |  | ทดสอบ | 0.5d | 2022-11-04 | 2022-11-04 |  | 4.5d |
| 100 | 4.9 | **เอกสารบทที่ 4-6** | 7d | 2022-11-11 | 2022-11-21 | 96 | 0d |
| 101 |  | เขียนเอกสาร | 7d | 2022-11-11 | 2022-11-21 |  | 0d |
| 102 |  | ส่งให้อาจารย์ที่ปรึกษา และ แก้ไข | 7d | 2022-11-11 | 2022-11-21 |  | 0d |

## Version 2 (saved 2022-08-28, file ipuatsons-WBS.mpp)

Note of the change: django api 100%

Last finish 2022-11-21 → 2023-02-02 (+73d). Complete tasks 0 → 3.

Added:

| ID | Task | Duration | Start | Finish | Resources |
| --- | --- | --- | --- | --- | --- |
| 54 | ตั้งค่า Network ของ Server | 5d | 2022-09-05 | 2022-09-09 | Sutee |
| 55 | ติดตั้งระบบ Cluster Kubernetes (MicroK8S) | 0.5d | 2022-09-05 | 2022-09-05 | Sutee |
| 56 | สร้างระบบ Dashboard | 1d? | 2022-09-05 | 2022-09-05 |  |

Removed: 84 พัฒนาส่วน Backend & API

Changed:

| ID | Task | Start | Finish | Duration | Complete | Total float | Other |
| --- | --- | --- | --- | --- | --- | --- | --- |
| 1 | **Requirement Analysis** | 2022-08-01 A |  |  | 0% → 79% |  |  |
| 2 | **Develop Project Title** | 2022-08-01 A | 2022-08-04 A |  | 0% → 100% | 0d → none |  |
| 3 | กำหนดจุดมุ่งหมายและขอบเขตการทำงาน | 2022-08-01 A | 2022-08-01 A |  | 0% → 100% | 3d → none |  |
| 4 | Develop, Review, Approval - Project Title | 2022-08-01 A | 2022-08-04 A |  | 0% → 100% | 0d → none |  |
| 5 | **Develop Preliminary Project Scope Statement** | 2022-08-05 A |  |  | 0% → 64% |  |  |
| 6 | กำหนด Functional Requirements | 2022-08-05 A |  |  | 0% → 58% |  |  |
| 7 | กำหนด Non Functional Requirements | 2022-08-05 A |  |  | 0% → 58% |  |  |
| 8 | กำหนดระยะเวลาการทำงาน | 2022-08-05 A | 2022-08-05 A |  | 0% → 100% | 2d → none |  |
| 9 | **Design Phase** | 2022-08-09 A | 2022-08-16 → 2022-08-29 (+13d) | 5d → 14d | 0% → 30% | 0d → none |  |
| 10 | ออกแบบ UX/UI | 2022-08-10 A |  |  | 0% → 50% | 0d → 2d |  |
| 11 | วาด Use Case Diagram | 2022-08-10 A |  |  | 0% → 22% | 2d → 4d |  |
| 12 | ออกแบบ Database | 2022-08-10 A |  |  | 0% → 33% | 3d → 5d |  |
| 14 | วาด Object Diagram | 2022-08-10 A |  |  | 0% → 65% | 4d → 6d |  |
| 15 | วาด Sequence Diagram | 2022-08-10 A |  |  | 0% → 13% | 0d → 2d |  |
| 18 | **Implementation - 1st** | 2022-08-17 → 2022-08-19 (+2d) | 2022-10-19 → 2022-11-10 (+22d) | 46d → 60d |  | 0d → none |  |
| 19 | **Tools Study** | 2022-08-17 → 2022-08-19 (+2d) | 2022-08-19 → 2022-09-01 (+13d) | 3d → 10d |  | 0d → none |  |
| 20 | เรียนรู้เกี่ยวกับ Vuet js | 2022-08-17 → 2022-08-19 (+2d) | 2022-08-19 → 2022-08-22 (+3d) | 3d → 2d |  | 0d → 52d |  |
| 21 | เรียนรู้เกี่ยวกับ Django | 2022-08-17 → 2022-08-19 (+2d) | 2022-08-19 → 2022-08-23 (+4d) |  |  | 0d → 51d |  |
| 22 | เรียนรู้เกี่ยวกับ MongoDB | 2022-08-17 → 2022-08-19 (+2d) | 2022-08-18 → 2022-08-22 (+4d) |  |  | 1d → 52d |  |
| 23 | เรียนรู้เกี่ยวกับ Ubuntu Server | 2022-08-17 → 2022-08-19 (+2d) | 2022-08-17 → 2022-08-19 (+2d) |  |  | 2d → 53d |  |
| 24 | เรียนรู้เกี่ยวกับ Kubernetes | 2022-08-17 → 2022-08-19 (+2d) | 2022-08-18 → 2022-08-22 (+4d) |  |  | 1d → 52d |  |
| 25 | เรียนรู้เกี่ยวกับ Microk8s | 2022-08-17 → 2022-08-19 (+2d) | 2022-08-17 → 2022-08-19 (+2d) |  |  | 2d → 53d |  |
| 26 | เรียนรู้เกี่ยวกับ Docker | 2022-08-17 → 2022-08-19 (+2d) | 2022-08-18 → 2022-08-22 (+4d) |  |  | 1d → 52d |  |
| 27 | เรียนรู้เกี่ยวกับ Nginx | 2022-08-17 → 2022-08-19 (+2d) | 2022-08-18 → 2022-08-22 (+4d) |  |  | 1d → 52d |  |
| 28 | **Coding Plan** | 2022-08-22 → 2022-09-02 (+11d) | 2022-08-22 → 2022-09-02 (+11d) |  |  | 0d → 44d |  |
| 29 | กำหนด Directory ในการทำงาน | 2022-08-22 → 2022-09-02 (+11d) | 2022-08-22 → 2022-09-02 (+11d) |  |  | 0d → 44d |  |
| 30 | กำหนด Version ของ framework และ libary ที่ใช้ | 2022-08-22 → 2022-09-02 (+11d) | 2022-08-22 → 2022-09-02 (+11d) |  |  | 0d → 44d |  |
| 31 | สร้างและตั้งค่า Github | 2022-08-22 → 2022-09-02 (+11d) | 2022-08-22 → 2022-09-02 (+11d) |  |  | 0d → 44d |  |
| 32 | **Account & Login Page** | 2022-08-23 → 2022-09-05 (+13d) | 2022-08-25 → 2022-09-07 (+13d) |  |  | 0d → 44d |  |
| 33 | พัฒนาส่วน Front End | 2022-08-23 → 2022-09-05 (+13d) | 2022-08-25 → 2022-09-07 (+13d) |  |  | 0d → 44d |  |
| 34 | พัฒนาส่วน Backend & API | 2022-08-23 → 2022-09-05 (+13d) | 2022-08-25 → 2022-09-07 (+13d) |  |  | 0d → 44d |  |
| 35 | ทดสอบ | 2022-08-23 → 2022-09-05 (+13d) | 2022-08-23 → 2022-09-05 (+13d) |  |  | 2d → 46d |  |
| 36 | **Feed Page** | 2022-08-26 → 2022-09-08 (+13d) | 2022-09-01 → 2022-09-14 (+13d) |  |  | 0d → 44d |  |
| 37 | พัฒนาส่วน Front End | 2022-08-26 → 2022-09-08 (+13d) | 2022-09-01 → 2022-09-14 (+13d) |  |  | 0d → 44d |  |
| 38 | พัฒนาส่วน Backend & API | 2022-08-26 → 2022-09-08 (+13d) | 2022-09-01 → 2022-09-14 (+13d) |  |  | 0d → 44d |  |
| 39 | ทดสอบ | 2022-08-26 → 2022-09-08 (+13d) | 2022-08-26 → 2022-09-08 (+13d) |  |  | 4.5d → 48.5d |  |
| 40 | **Drive Page** | 2022-09-02 → 2022-09-15 (+13d) | 2022-09-08 → 2022-09-21 (+13d) |  |  | 0d → 44d |  |
| 41 | พัฒนาส่วน Front End | 2022-09-02 → 2022-09-15 (+13d) | 2022-09-08 → 2022-09-21 (+13d) |  |  | 0d → 44d |  |
| 42 | พัฒนาส่วน Backend & API | 2022-09-02 → 2022-09-15 (+13d) | 2022-09-08 → 2022-09-21 (+13d) |  |  | 0d → 44d |  |
| 43 | ทดสอบ | 2022-09-02 → 2022-09-15 (+13d) | 2022-09-02 → 2022-09-15 (+13d) |  |  | 4.5d → 48.5d |  |
| 44 | **Application Page** | 2022-09-09 → 2022-09-22 (+13d) | 2022-09-15 → 2022-09-28 (+13d) |  |  | 0d → 44d |  |
| 45 | พัฒนาส่วน Front End | 2022-09-09 → 2022-09-22 (+13d) | 2022-09-15 → 2022-09-28 (+13d) |  |  | 0d → 44d |  |
| 46 | พัฒนาส่วน Backend & API | 2022-09-09 → 2022-09-22 (+13d) | 2022-09-15 → 2022-09-28 (+13d) |  |  | 0d → 44d |  |
| 47 | ทดสอบ | 2022-09-09 → 2022-09-22 (+13d) | 2022-09-09 → 2022-09-22 (+13d) |  |  | 4.5d → 48.5d |  |
| 48 | **Setting Page** | 2022-09-16 → 2022-09-29 (+13d) | 2022-09-19 → 2022-09-30 (+11d) |  |  | 0d → 44d |  |
| 49 | พัฒนาส่วน Front End | 2022-09-16 → 2022-09-29 (+13d) | 2022-09-16 → 2022-09-29 (+13d) |  |  | 1d → 45d |  |
| 50 | พัฒนาส่วน Backend & API | 2022-09-16 → 2022-09-29 (+13d) | 2022-09-19 → 2022-09-30 (+11d) |  |  | 0d → 44d |  |
| 51 | ทดสอบ | 2022-09-16 → 2022-09-29 (+13d) | 2022-09-16 → 2022-09-29 (+13d) |  |  | 1.5d → 45.5d |  |
| 52 | **Server** | 2022-08-23 → 2022-09-05 (+13d) | 2022-08-29 → 2022-09-09 (+11d) |  |  | 15d → 59d |  |
| 53 | ติดตั้ง OS สำหรับ Server และสร้าง VM | 2022-08-23 → 2022-09-05 (+13d) | 2022-08-29 → 2022-09-09 (+11d) |  |  | 15d → 59d | was named ติดตั้ง Os สำหรับ Server และสร้าง VM |
| 57 | **1st Test Plan** | 2022-09-20 → 2022-10-03 (+13d) | 2022-09-22 → 2022-10-05 (+13d) |  |  | 0d → 44d |  |
| 58 | ทดสอบการเชื่อมต่อกันระหว่าง Web Application และ Server | 2022-09-20 → 2022-10-03 (+13d) | 2022-09-21 → 2022-10-04 (+13d) |  |  | 1d → 45d |  |
| 59 | ประมวลผลการทดสอบ | 2022-09-20 → 2022-10-03 (+13d) | 2022-09-22 → 2022-10-05 (+13d) |  |  | 0d → 44d |  |
| 60 | **Mock Demo - 1st** | 2022-09-23 → 2022-10-06 (+13d) | 2022-10-03 → 2022-10-14 (+11d) |  |  | 0d → 44d |  |
| 61 | ทดสอบการกับกลุ่มผู้ใช้กลุ่มหนึง | 2022-09-23 → 2022-10-06 (+13d) | 2022-10-03 → 2022-10-14 (+11d) |  |  | 0d → 44d |  |
| 62 | ประเมินความพึงพอใจ | 2022-09-23 → 2022-10-06 (+13d) | 2022-09-23 → 2022-10-06 (+13d) |  |  | 6d → 50d |  |
| 63 | **การปรับปรุงจากผลตอบรับ - 1st** | 2022-10-04 → 2022-10-17 (+13d) | 2022-10-10 → 2022-10-21 (+11d) |  |  | 0d → 44d |  |
| 64 | พัฒนาส่วน Front End เพิ่มเติมจากผลการประเมินจากผู้ใช้ | 2022-10-04 → 2022-10-17 (+13d) | 2022-10-10 → 2022-10-21 (+11d) |  |  | 0d → 44d |  |
| 65 | พัฒนาส่วน Backend & API เพิ่มเติมจากผลการประเมินจากผู้ใช้ | 2022-10-04 → 2022-10-17 (+13d) | 2022-10-10 → 2022-10-21 (+11d) |  |  | 0d → 44d |  |
| 66 | ทดสอบ | 2022-10-04 → 2022-10-17 (+13d) | 2022-10-04 → 2022-10-17 (+13d) |  |  | 4.5d → 48.5d |  |
| 67 | **เอกสารบทที่ 1-3** | 2022-10-11 → 2022-10-24 (+13d) | 2022-10-19 → 2022-11-01 (+13d) |  |  | 0d → 44d |  |
| 68 | เขียนเอกสาร | 2022-10-11 → 2022-10-24 (+13d) | 2022-10-19 → 2022-11-01 (+13d) |  |  | 0d → 44d |  |
| 69 | ส่งให้อาจารย์ที่ปรึกษา และ แก้ไข | 2022-10-11 → 2022-10-24 (+13d) | 2022-10-19 → 2022-11-01 (+13d) |  |  | 0d → 44d |  |
| 70 | **Implementation - 2nd** | 2022-10-20 → 2022-11-11 (+22d) | 2022-11-21 → 2023-02-02 (+73d) | 23d → 60d |  | 0d → none |  |
| 71 | **Application Page - model processing** | 2022-10-20 → 2022-11-11 (+22d) | 2022-10-21 → 2022-11-14 (+24d) |  |  | 0d → 37d |  |
| 72 | พัฒนาส่วน Front End | 2022-10-20 → 2022-11-11 (+22d) | 2022-10-20 → 2022-11-11 (+22d) |  |  | 1d → 38d |  |
| 73 | พัฒนาส่วน Backend & API | 2022-10-20 → 2022-11-11 (+22d) | 2022-10-21 → 2022-11-14 (+24d) |  |  | 0d → 37d |  |
| 74 | ทดสอบ | 2022-10-20 → 2022-11-11 (+22d) | 2022-10-20 → 2022-11-11 (+22d) |  |  | 1.5d → 38.5d |  |
| 75 | **Market Place Page** | 2022-10-24 → 2022-11-15 (+22d) | 2022-10-25 → 2022-11-16 (+22d) |  |  | 0d → 37d |  |
| 76 | พัฒนาส่วน Front End | 2022-10-24 → 2022-11-15 (+22d) | 2022-10-24 → 2022-11-15 (+22d) |  |  | 1d → 38d |  |

| ID | Task | Start | Finish | Duration | Total float | Other |
| --- | --- | --- | --- | --- | --- | --- |
| 77 | พัฒนาส่วน Backend & API | 2022-10-24 → 2022-11-15 (+22d) | 2022-10-25 → 2022-11-16 (+22d) |  | 0d → 37d |  |
| 78 | ทดสอบ | 2022-10-24 → 2022-11-15 (+22d) | 2022-10-24 → 2022-11-15 (+22d) |  | 1.5d → 38.5d |  |
| 79 | **Model Uplaod Page** | 2022-10-24 → 2022-11-15 (+22d) | 2022-10-25 → 2022-11-16 (+22d) |  | 0d → 37d |  |
| 80 | พัฒนาส่วน Front End | 2022-10-24 → 2022-11-15 (+22d) | 2022-10-24 → 2022-11-15 (+22d) |  | 1d → 38d |  |
| 81 | พัฒนาส่วน Backend & API | 2022-10-24 → 2022-11-15 (+22d) | 2022-10-25 → 2022-11-16 (+22d) |  | 0d → 37d |  |
| 82 | ทดสอบ | 2022-10-24 → 2022-11-15 (+22d) | 2022-10-24 → 2022-11-15 (+22d) |  | 1.5d → 38.5d |  |
| 83 | **Server** | 2022-10-20 → 2022-11-11 (+22d) | 2022-10-21 → 2022-11-11 (+21d) | 2d → 1d | 2d → 40d |  |
| 84 | พัฒนา Performance ของ Server | 2022-10-20 → 2022-11-11 (+22d) | 2022-10-20 → 2022-11-11 (+22d) |  | 3d → 40d | was named พัฒนาส่วน Front End |
| 85 | ทดสอบ | 2022-10-20 → 2022-11-11 (+22d) | 2022-10-20 → 2022-11-11 (+22d) |  | 3.5d → 40.5d |  |
| 86 | **Mock Demo - 2nd** | 2022-10-26 → 2022-11-17 (+22d) | 2022-10-26 → 2022-11-17 (+22d) |  | 0d → 37d |  |
| 87 | ทดสอบการกับกลุ่มผู้ใช้กลุ่มหนึง | 2022-10-26 → 2022-11-17 (+22d) | 2022-10-26 → 2022-11-17 (+22d) |  | 0d → 37d |  |
| 88 | ประเมินความพึงพอใจ | 2022-10-26 → 2022-11-17 (+22d) | 2022-10-26 → 2022-11-17 (+22d) |  | 0d → 37d |  |
| 89 | **การปรับปรุงจากผลตอบรับ - 2st** | 2022-10-27 → 2022-11-18 (+22d) | 2022-11-02 → 2022-11-24 (+22d) |  | 0d → 37d |  |
| 90 | พัฒนาส่วน Front End เพิ่มเติมจากผลการประเมินจากผู้ใช้ | 2022-10-27 → 2022-11-18 (+22d) | 2022-11-02 → 2022-11-24 (+22d) |  | 0d → 37d |  |
| 91 | พัฒนาส่วน Backend & API เพิ่มเติมจากผลการประเมินจากผู้ใช้ | 2022-10-27 → 2022-11-18 (+22d) | 2022-11-02 → 2022-11-24 (+22d) |  | 0d → 37d |  |
| 92 | ทดสอบ | 2022-10-27 → 2022-11-18 (+22d) | 2022-10-27 → 2022-11-18 (+22d) |  | 4.5d → 41.5d |  |
| 93 | **Mock Demo - 3rd** | 2022-11-03 → 2022-11-25 (+22d) | 2022-11-03 → 2022-11-25 (+22d) |  | 0d → 37d |  |
| 94 | ทดสอบการกับกลุ่มผู้ใช้กลุ่มหนึง | 2022-11-03 → 2022-11-25 (+22d) | 2022-11-03 → 2022-11-25 (+22d) |  | 0d → 37d |  |
| 95 | ประเมินความพึงพอใจ | 2022-11-03 → 2022-11-25 (+22d) | 2022-11-03 → 2022-11-25 (+22d) |  | 0d → 37d |  |
| 96 | **การปรับปรุงจากผลตอบรับ - 3rd** | 2022-11-04 → 2022-11-28 (+24d) | 2022-11-10 → 2022-12-02 (+22d) |  | 0d → 37d |  |
| 97 | พัฒนาส่วน Front End เพิ่มเติมจากผลการประเมินจากผู้ใช้ | 2022-11-04 → 2022-11-28 (+24d) | 2022-11-10 → 2022-12-02 (+22d) |  | 0d → 37d |  |
| 98 | พัฒนาส่วน Backend & API เพิ่มเติมจากผลการประเมินจากผู้ใช้ | 2022-11-04 → 2022-11-28 (+24d) | 2022-11-10 → 2022-12-02 (+22d) |  | 0d → 37d |  |
| 99 | ทดสอบ | 2022-11-04 → 2022-11-28 (+24d) | 2022-11-04 → 2022-11-28 (+24d) |  | 4.5d → 41.5d |  |
| 100 | **เอกสารบทที่ 4-6** | 2022-11-11 → 2022-12-05 (+24d) | 2022-11-21 → 2022-12-13 (+22d) |  | 0d → 37d |  |
| 101 | เขียนเอกสาร | 2022-11-11 → 2022-12-05 (+24d) | 2022-11-21 → 2022-12-13 (+22d) |  | 0d → 37d |  |
| 102 | ส่งให้อาจารย์ที่ปรึกษา และ แก้ไข | 2022-11-11 → 2022-12-05 (+24d) | 2022-11-21 → 2022-12-13 (+22d) |  | 0d → 37d |  |

## Version 3 (saved 2022-09-01, file ipuatsons-WBS.mpp)

Note of the change: Merge branch 'main' of https://github.com/SuteeSaraphan/IPAuTSoNS

Last finish 2023-02-02 → 2023-03-24 (+50d). Complete tasks 3 → 18.

Added:

| ID | Task | Duration | Start | Finish | Predecessors | Constraint | Resources |
| --- | --- | --- | --- | --- | --- | --- | --- |
| 28 | เขียน Progress report #1 | 1d | 2022-08-22 A | 2022-08-26 A | 19 |  | Pasin; Sutee |
| 29 | progress report #1 | 0d | 2022-08-26 A | 2022-08-26 A |  |  | Pasin; Sutee |
| 33 | สร้าง และ ตั้งค่า Docker | 1d | 2022-08-31 A | 2022-08-31 A |  |  | Sutee |
| 39 | เขียน Progress report #2 | 5d | 2022-09-05 | 2022-09-09 |  |  | Pasin; Sutee |
| 40 | progress report #2 | 0d | 2022-09-09 | 2022-09-09 |  |  |  |
| 49 | เขียน Progress report #3 | 4d | 2022-09-19 | 2022-09-22 |  |  | Pasin; Sutee |
| 50 | progress report #3 | 0d | 2022-09-23 | 2022-09-23 |  |  |  |
| 64 | เขียน Progress report #4 | 4d | 2022-10-17 | 2022-10-20 |  |  | Pasin; Sutee |
| 65 | progress report #4 - report chapter #1 | 0d | 2022-10-21 | 2022-10-21 |  |  |  |
| 76 | เขียน Progress report #5 | 4d | 2022-10-31 | 2022-11-03 |  |  | Pasin; Sutee |
| 77 | progress report #5 - report chapter #2 | 0d | 2022-11-04 | 2022-11-04 |  |  |  |
| 78 | progress report #6 - report chapter #1 | 0d | 2022-11-25 | 2022-11-25 |  |  |  |
| 79 | ส่งเล่มรายงานและไฟล์รายงานสำหรับสอบโครงการ 1 | 1d | 2022-12-09 | 2022-12-09 |  | start no earlier than 2022-12-09 |  |
| 80 | สอบโครงการ 1 | 0d | 2022-12-16 | 2022-12-16 |  |  |  |

Removed: 67 เอกสารบทที่ 1-3; 68 เขียนเอกสาร; 69 ส่งให้อาจารย์ที่ปรึกษา และ แก้ไข

Changed:

| ID | Task | Start | Finish | Duration | Complete | Total float | Predecessors | Other |
| --- | --- | --- | --- | --- | --- | --- | --- | --- |
| 1 | **Requirement Analysis** |  | 2022-08-09 A |  | 79% → 100% |  |  | baseline start none → 2022-08-01; baseline finish none → 2022-08-09 |
| 2 | **Develop Project Title** |  |  |  |  |  |  | baseline start none → 2022-08-01; baseline finish none → 2022-08-04 |
| 3 | กำหนดจุดมุ่งหมายและขอบเขตการทำงาน |  |  |  |  |  |  | baseline start none → 2022-08-01; baseline finish none → 2022-08-01 |
| 4 | Develop, Review, Approval - Project Title |  |  |  |  |  |  | baseline start none → 2022-08-01; baseline finish none → 2022-08-04 |
| 5 | **Develop Preliminary Project Scope Statement** |  | 2022-08-09 A |  | 64% → 100% | 0d → none |  | baseline start none → 2022-08-05; baseline finish none → 2022-08-09 |
| 6 | กำหนด Functional Requirements |  | 2022-08-09 A |  | 58% → 100% | 0d → none |  | baseline start none → 2022-08-05; baseline finish none → 2022-08-09 |
| 7 | กำหนด Non Functional Requirements |  | 2022-08-09 A |  | 58% → 100% | 0d → none |  | baseline start none → 2022-08-05; baseline finish none → 2022-08-09 |
| 8 | กำหนดระยะเวลาการทำงาน |  |  |  |  |  |  | baseline start none → 2022-08-05; baseline finish none → 2022-08-05 |
| 9 | **Design Phase** |  |  |  | 30% → 1% |  |  | baseline start none → 2022-08-09; baseline finish none → 2022-08-29 |
| 10 | ออกแบบ UX/UI | 2022-08-10 A → 2022-08-10 |  |  | 50% → 0% |  |  | baseline start none → 2022-08-10; baseline finish none → 2022-08-16 |
| 11 | วาด Use Case Diagram | 2022-08-10 A → 2022-08-10 |  |  | 22% → 0% |  |  | baseline start none → 2022-08-10; baseline finish none → 2022-08-12 |
| 12 | ออกแบบ Database |  |  |  | 33% → 5% |  |  | baseline start none → 2022-08-10; baseline finish none → 2022-08-11 |
| 13 | ประมวลภาพรวมการออกแบบครั้งที่ 1 |  |  |  |  |  |  | baseline start none → 2022-08-10; baseline finish none → 2022-08-10 |
| 14 | วาด Object Diagram | 2022-08-10 A → 2022-08-10 |  |  | 65% → 0% |  |  | baseline start none → 2022-08-10; baseline finish none → 2022-08-10 |
| 15 | วาด Sequence Diagram | 2022-08-10 A → 2022-08-10 |  |  | 13% → 0% |  |  | baseline start none → 2022-08-10; baseline finish none → 2022-08-16 |
| 16 | ประมวลภาพรวมการออกแบบครั้งที่ 2 |  |  |  |  |  |  | baseline start none → 2022-08-10; baseline finish none → 2022-08-10 |
| 17 | Design Phase เสร็จสิ้น |  |  |  |  |  |  | baseline start none → 2022-08-09; baseline finish none → 2022-08-09 |
| 18 | **Implementation - 1st** | 2022-08-19 A | 2022-11-10 → 2022-12-09 (+29d) | 60d → 81d | 0% → 22% |  |  | baseline start none → 2022-08-19; baseline finish none → 2022-12-09 |
| 19 | **Tools Study** | 2022-08-19 A | 2022-09-01 → 2022-08-30 (-2d) | 10d → 8d | 0% → 90% |  |  | baseline start none → 2022-08-19; baseline finish none → 2022-09-01 |
| 20 | เรียนรู้เกี่ยวกับ Vuet js | 2022-08-19 A | 2022-08-22 → 2022-08-23 (+1d) | 2d → 3d | 0% → 67% | 52d → 2d |  | baseline start none → 2022-08-19; baseline finish none → 2022-08-22 |
| 21 | เรียนรู้เกี่ยวกับ Django | 2022-08-19 → 2022-08-23 A (+4d) | 2022-08-23 → 2022-08-26 (+3d) | 3d → 4d | 0% → 75% | 51d → 2d | none → 20 | baseline start none → 2022-08-19; baseline finish none → 2022-08-23 |
| 22 | เรียนรู้เกี่ยวกับ MongoDB | 2022-08-19 → 2022-08-26 A (+7d) | 2022-08-22 → 2022-08-29 A (+7d) |  | 0% → 100% | 52d → none | none → 21 | baseline start none → 2022-08-19; baseline finish none → 2022-08-22 |
| 23 | เรียนรู้เกี่ยวกับ Ubuntu Server | 2022-08-19 A | 2022-08-19 A |  | 0% → 100% | 53d → none |  | baseline start none → 2022-08-19; baseline finish none → 2022-08-19 |
| 24 | เรียนรู้เกี่ยวกับ Docker | 2022-08-19 A | 2022-08-22 A |  | 0% → 100% | 52d → none | none → 23 | baseline start none → 2022-08-19; baseline finish none → 2022-08-22 |
| 25 | เรียนรู้เกี่ยวกับ Nginx | 2022-08-19 → 2022-08-22 A (+3d) | 2022-08-22 → 2022-08-23 A (+1d) |  | 0% → 100% | 52d → none | none → 24 | baseline start none → 2022-08-19; baseline finish none → 2022-08-22 |
| 26 | เรียนรู้เกี่ยวกับ Kubernetes | 2022-08-19 → 2022-08-23 A (+4d) | 2022-08-22 → 2022-08-24 A (+2d) |  | 0% → 100% | 52d → none | none → 25 | baseline start none → 2022-08-19; baseline finish none → 2022-08-22 |
| 27 | เรียนรู้เกี่ยวกับ Microk8s, K3D, K3S | 2022-08-19 → 2022-08-24 A (+5d) | 2022-08-19 → 2022-08-29 A (+10d) | 1d → 4d | 0% → 100% | 53d → none | none → 26 | was named เรียนรู้เกี่ยวกับ Microk8s; baseline start none → 2022-08-19; baseline finish none → 2022-08-25 |
| 30 | **Coding Plan** | 2022-09-02 → 2022-08-31 A (-2d) | 2022-09-02 A | 1d → 3d | 0% → 100% | 44d → none |  | baseline start none → 2022-09-02; baseline finish none → 2022-09-02 |
| 31 | กำหนด Directory ในการทำงาน | 2022-09-02 A | 2022-09-02 A |  | 0% → 100% | 44d → none |  | baseline start none → 2022-09-02; baseline finish none → 2022-09-02 |
| 32 | กำหนด Version ของ framework และ libary ที่ใช้ | 2022-09-02 A | 2022-09-02 A |  | 0% → 100% | 44d → none |  | baseline start none → 2022-09-02; baseline finish none → 2022-09-02 |
| 34 | สร้าง และ ตั้งค่า Github | 2022-09-02 A | 2022-09-02 A |  | 0% → 100% | 44d → none |  | was named สร้างและตั้งค่า Github; resources Sutee → Sutee; Pasin; baseline start none → 2022-09-02; baseline finish none → 2022-09-02 |
| 35 | **Account & Login Page** | 2022-09-05 A | 2022-09-07 → 2022-09-13 (+6d) | 3d → 7d | 0% → 50% | 44d → none |  | baseline start none → 2022-09-05; baseline finish none → 2022-09-13 |
| 36 | พัฒนาส่วน Front End | 2022-09-05 A |  |  | 0% → 42% | 44d → 80d |  | baseline start none → 2022-09-05; baseline finish none → 2022-09-07 |
| 37 | พัฒนาส่วน Backend & API | 2022-09-05 A |  |  | 0% → 42% | 44d → 80d |  | baseline start none → 2022-09-05; baseline finish none → 2022-09-07 |
| 38 | ทดสอบ | 2022-09-05 A | 2022-09-05 A |  | 0% → 100% | 46d → none |  | baseline start none → 2022-09-05; baseline finish none → 2022-09-05 |
| 41 | **Feed Page** | 2022-09-08 → 2022-09-12 (+4d) | 2022-09-14 → 2022-09-20 (+6d) | 5d → 7d |  | 44d → none |  | baseline start none → 2022-09-12; baseline finish none → 2022-09-20 |
| 42 | พัฒนาส่วน Front End | 2022-09-08 → 2022-09-12 (+4d) | 2022-09-14 → 2022-09-16 (+2d) |  |  | 44d → 78d |  | baseline start none → 2022-09-12; baseline finish none → 2022-09-16 |
| 43 | พัฒนาส่วน Backend & API | 2022-09-08 → 2022-09-12 (+4d) | 2022-09-14 → 2022-09-16 (+2d) |  |  | 44d → 78d |  | baseline start none → 2022-09-12; baseline finish none → 2022-09-16 |
| 44 | ทดสอบ | 2022-09-08 → 2022-09-12 (+4d) | 2022-09-08 → 2022-09-12 (+4d) |  |  | 48.5d → 82.5d |  | baseline start none → 2022-09-12; baseline finish none → 2022-09-12 |
| 45 | **Drive Page** | 2022-09-15 → 2022-09-21 (+6d) | 2022-09-21 → 2022-10-04 (+13d) | 5d → 10d |  | 44d → none |  | baseline start none → 2022-09-21; baseline finish none → 2022-10-04 |
| 46 | พัฒนาส่วน Front End | 2022-09-15 → 2022-09-21 (+6d) | 2022-09-21 → 2022-09-27 (+6d) |  |  | 44d → 76d |  | baseline start none → 2022-09-21; baseline finish none → 2022-09-27 |
| 47 | พัฒนาส่วน Backend & API | 2022-09-15 → 2022-09-21 (+6d) | 2022-09-21 → 2022-09-27 (+6d) |  |  | 44d → 76d |  | baseline start none → 2022-09-21; baseline finish none → 2022-09-27 |
| 48 | ทดสอบ | 2022-09-15 → 2022-09-21 (+6d) | 2022-09-15 → 2022-09-21 (+6d) |  |  | 48.5d → 80.5d |  | baseline start none → 2022-09-21; baseline finish none → 2022-09-21 |
| 51 | **Application page** | 2022-09-22 → 2022-10-25 (+33d) | 2022-09-28 → 2022-11-11 (+44d) | 5d → 14d |  | 44d → none | 45 → 45FS+14d | was named Application Page; baseline start none → 2022-10-25; baseline finish none → 2022-11-11 |
| 52 | พัฒนาส่วน Front End | 2022-09-22 → 2022-10-25 (+33d) | 2022-09-28 → 2022-10-31 (+33d) |  |  | 44d → 71d |  | baseline start none → 2022-10-25; baseline finish none → 2022-10-31 |
| 53 | พัฒนาส่วน Backend & API | 2022-09-22 → 2022-10-25 (+33d) | 2022-09-28 → 2022-10-31 (+33d) |  |  | 44d → 71d |  | baseline start none → 2022-10-25; baseline finish none → 2022-10-31 |
| 54 | ทดสอบ | 2022-09-22 → 2022-10-25 (+33d) | 2022-09-22 → 2022-10-25 (+33d) |  |  | 48.5d → 75.5d |  | baseline start none → 2022-10-25; baseline finish none → 2022-10-25 |
| 55 | **Setting Page** | 2022-09-29 → 2022-11-14 (+46d) | 2022-09-30 → 2022-11-18 (+49d) | 2d → 5d |  | 44d → none |  | baseline start none → 2022-11-14; baseline finish none → 2022-11-18 |
| 56 | พัฒนาส่วน Front End | 2022-09-29 → 2022-11-14 (+46d) | 2022-09-29 → 2022-11-14 (+46d) |  |  | 45d → 63d |  | baseline start none → 2022-11-14; baseline finish none → 2022-11-14 |
| 57 | พัฒนาส่วน Backend & API | 2022-09-29 → 2022-11-14 (+46d) | 2022-09-30 → 2022-11-15 (+46d) |  |  | 44d → 62d |  | baseline start none → 2022-11-14; baseline finish none → 2022-11-15 |
| 58 | ทดสอบ | 2022-09-29 → 2022-11-14 (+46d) | 2022-09-29 → 2022-11-14 (+46d) |  |  | 45.5d → 63.5d |  | baseline start none → 2022-11-14; baseline finish none → 2022-11-14 |
| 59 | **Server** |  | 2022-09-09 → 2022-09-22 (+13d) | 5d → 14d |  | 59d → none |  | baseline start none → 2022-09-05; baseline finish none → 2022-09-22 |
| 60 | ติดตั้ง OS สำหรับ Server และสร้าง VM |  |  |  |  | 59d → 109d |  | baseline start none → 2022-09-05; baseline finish none → 2022-09-09 |
| 61 | ตั้งค่า Network ของ Server |  |  |  |  | 59d → 109d |  | baseline start none → 2022-09-05; baseline finish none → 2022-09-09 |
| 62 | ติดตั้งระบบ Cluster Kubernetes (MicroK8S) |  |  |  |  | 63.5d → 113.5d |  | baseline start none → 2022-09-05; baseline finish none → 2022-09-05 |
| 63 | สร้างระบบ Dashboard |  |  |  |  |  |  | baseline start none → 2022-09-05; baseline finish none → 2022-09-05 |
| 66 | **1st Test Plan** | 2022-10-03 → 2022-11-21 (+49d) | 2022-10-05 → 2022-11-23 (+49d) |  |  | 44d → none |  | baseline start none → 2022-11-21; baseline finish none → 2022-11-23 |
| 67 | ทดสอบการเชื่อมต่อกันระหว่าง Web Application และ Server | 2022-10-03 → 2022-11-21 (+49d) | 2022-10-04 → 2022-11-22 (+49d) |  |  | 45d → 60d |  | baseline start none → 2022-11-21; baseline finish none → 2022-11-22 |
| 68 | ประมวลผลการทดสอบ | 2022-10-03 → 2022-11-21 (+49d) | 2022-10-05 → 2022-11-23 (+49d) |  |  | 44d → 59d |  | baseline start none → 2022-11-21; baseline finish none → 2022-11-23 |
| 69 | **Mock Demo - 1st** | 2022-10-06 → 2022-11-24 (+49d) | 2022-10-14 → 2022-12-02 (+49d) |  |  | 44d → 59d |  | baseline start none → 2022-11-24; baseline finish none → 2022-12-02 |
| 70 | ทดสอบการกับกลุ่มผู้ใช้กลุ่มหนึง | 2022-10-06 → 2022-11-24 (+49d) | 2022-10-14 → 2022-12-02 (+49d) |  |  | 44d → 59d |  | baseline start none → 2022-11-24; baseline finish none → 2022-12-02 |
| 71 | ประเมินความพึงพอใจ | 2022-10-06 → 2022-11-24 (+49d) | 2022-10-06 → 2022-11-24 (+49d) |  |  | 50d → 65d |  | baseline start none → 2022-11-24; baseline finish none → 2022-11-24 |
| 72 | **การปรับปรุงจากผลตอบรับ - 1st** | 2022-10-17 → 2022-12-05 (+49d) | 2022-10-21 → 2022-12-09 (+49d) |  |  | 44d → 59d |  | baseline start none → 2022-12-05; baseline finish none → 2022-12-09 |
| 73 | พัฒนาส่วน Front End เพิ่มเติมจากผลการประเมินจากผู้ใช้ | 2022-10-17 → 2022-12-05 (+49d) | 2022-10-21 → 2022-12-09 (+49d) |  |  | 44d → 59d |  | baseline start none → 2022-12-05; baseline finish none → 2022-12-09 |
| 74 | พัฒนาส่วน Backend & API เพิ่มเติมจากผลการประเมินจากผู้ใช้ | 2022-10-17 → 2022-12-05 (+49d) | 2022-10-21 → 2022-12-09 (+49d) |  |  | 44d → 59d |  | baseline start none → 2022-12-05; baseline finish none → 2022-12-09 |
| 75 | ทดสอบ | 2022-10-17 → 2022-12-05 (+49d) | 2022-10-17 → 2022-12-05 (+49d) |  |  | 48.5d → 63.5d |  | baseline start none → 2022-12-05; baseline finish none → 2022-12-05 |
| 81 | **Implementation - 2nd** | 2022-11-11 → 2023-01-02 (+52d) | 2023-02-02 → 2023-03-24 (+50d) |  |  |  | 18 → 80FS+15d | baseline start none → 2023-01-02; baseline finish none → 2023-03-24 |
| 82 | **Application Page - model processing** | 2022-11-11 → 2023-01-02 (+52d) | 2022-11-14 → 2023-01-03 (+50d) |  |  | 37d → 44d |  | baseline start none → 2023-01-02; baseline finish none → 2023-01-03 |
| 83 | พัฒนาส่วน Front End | 2022-11-11 → 2023-01-02 (+52d) | 2022-11-11 → 2023-01-02 (+52d) |  |  | 38d → 45d |  | baseline start none → 2023-01-02; baseline finish none → 2023-01-02 |
| 84 | พัฒนาส่วน Backend & API | 2022-11-11 → 2023-01-02 (+52d) | 2022-11-14 → 2023-01-03 (+50d) |  |  | 37d → 44d |  | baseline start none → 2023-01-02; baseline finish none → 2023-01-03 |

| ID | Task | Start | Finish | Total float | Other |
| --- | --- | --- | --- | --- | --- |
| 85 | ทดสอบ | 2022-11-11 → 2023-01-02 (+52d) | 2022-11-11 → 2023-01-02 (+52d) | 38.5d → 45.5d | baseline start none → 2023-01-02; baseline finish none → 2023-01-02 |
| 86 | **Market Place Page** | 2022-11-15 → 2023-01-04 (+50d) | 2022-11-16 → 2023-01-05 (+50d) | 37d → 44d | baseline start none → 2023-01-04; baseline finish none → 2023-01-05 |
| 87 | พัฒนาส่วน Front End | 2022-11-15 → 2023-01-04 (+50d) | 2022-11-15 → 2023-01-04 (+50d) | 38d → 45d | baseline start none → 2023-01-04; baseline finish none → 2023-01-04 |
| 88 | พัฒนาส่วน Backend & API | 2022-11-15 → 2023-01-04 (+50d) | 2022-11-16 → 2023-01-05 (+50d) | 37d → 44d | baseline start none → 2023-01-04; baseline finish none → 2023-01-05 |
| 89 | ทดสอบ | 2022-11-15 → 2023-01-04 (+50d) | 2022-11-15 → 2023-01-04 (+50d) | 38.5d → 45.5d | baseline start none → 2023-01-04; baseline finish none → 2023-01-04 |
| 90 | **Model Uplaod Page** | 2022-11-15 → 2023-01-04 (+50d) | 2022-11-16 → 2023-01-05 (+50d) | 37d → 44d | baseline start none → 2023-01-04; baseline finish none → 2023-01-05 |
| 91 | พัฒนาส่วน Front End | 2022-11-15 → 2023-01-04 (+50d) | 2022-11-15 → 2023-01-04 (+50d) | 38d → 45d | baseline start none → 2023-01-04; baseline finish none → 2023-01-04 |
| 92 | พัฒนาส่วน Backend & API | 2022-11-15 → 2023-01-04 (+50d) | 2022-11-16 → 2023-01-05 (+50d) | 37d → 44d | baseline start none → 2023-01-04; baseline finish none → 2023-01-05 |
| 93 | ทดสอบ | 2022-11-15 → 2023-01-04 (+50d) | 2022-11-15 → 2023-01-04 (+50d) | 38.5d → 45.5d | baseline start none → 2023-01-04; baseline finish none → 2023-01-04 |
| 94 | **Server** | 2022-11-11 → 2023-01-02 (+52d) | 2022-11-11 → 2023-01-02 (+52d) | 40d → 47d | baseline start none → 2023-01-02; baseline finish none → 2023-01-02 |
| 95 | พัฒนา Performance ของ Server | 2022-11-11 → 2023-01-02 (+52d) | 2022-11-11 → 2023-01-02 (+52d) | 40d → 47d | baseline start none → 2023-01-02; baseline finish none → 2023-01-02 |
| 96 | ทดสอบ | 2022-11-11 → 2023-01-02 (+52d) | 2022-11-11 → 2023-01-02 (+52d) | 40.5d → 47.5d | baseline start none → 2023-01-02; baseline finish none → 2023-01-02 |
| 97 | **Mock Demo - 2nd** | 2022-11-17 → 2023-01-06 (+50d) | 2022-11-17 → 2023-01-06 (+50d) | 37d → 44d | baseline start none → 2023-01-06; baseline finish none → 2023-01-06 |
| 98 | ทดสอบการกับกลุ่มผู้ใช้กลุ่มหนึง | 2022-11-17 → 2023-01-06 (+50d) | 2022-11-17 → 2023-01-06 (+50d) | 37d → 44d | baseline start none → 2023-01-06; baseline finish none → 2023-01-06 |
| 99 | ประเมินความพึงพอใจ | 2022-11-17 → 2023-01-06 (+50d) | 2022-11-17 → 2023-01-06 (+50d) | 37d → 44d | baseline start none → 2023-01-06; baseline finish none → 2023-01-06 |
| 100 | **การปรับปรุงจากผลตอบรับ - 2st** | 2022-11-18 → 2023-01-09 (+52d) | 2022-11-24 → 2023-01-13 (+50d) | 37d → 44d | baseline start none → 2023-01-09; baseline finish none → 2023-01-13 |
| 101 | พัฒนาส่วน Front End เพิ่มเติมจากผลการประเมินจากผู้ใช้ | 2022-11-18 → 2023-01-09 (+52d) | 2022-11-24 → 2023-01-13 (+50d) | 37d → 44d | baseline start none → 2023-01-09; baseline finish none → 2023-01-13 |
| 102 | พัฒนาส่วน Backend & API เพิ่มเติมจากผลการประเมินจากผู้ใช้ | 2022-11-18 → 2023-01-09 (+52d) | 2022-11-24 → 2023-01-13 (+50d) | 37d → 44d | baseline start none → 2023-01-09; baseline finish none → 2023-01-13 |
| 103 | ทดสอบ | 2022-11-18 → 2023-01-09 (+52d) | 2022-11-18 → 2023-01-09 (+52d) | 41.5d → 48.5d | baseline start none → 2023-01-09; baseline finish none → 2023-01-09 |
| 104 | **Mock Demo - 3rd** | 2022-11-25 → 2023-01-16 (+52d) | 2022-11-25 → 2023-01-16 (+52d) | 37d → 44d | baseline start none → 2023-01-16; baseline finish none → 2023-01-16 |
| 105 | ทดสอบการกับกลุ่มผู้ใช้กลุ่มหนึง | 2022-11-25 → 2023-01-16 (+52d) | 2022-11-25 → 2023-01-16 (+52d) | 37d → 44d | baseline start none → 2023-01-16; baseline finish none → 2023-01-16 |
| 106 | ประเมินความพึงพอใจ | 2022-11-25 → 2023-01-16 (+52d) | 2022-11-25 → 2023-01-16 (+52d) | 37d → 44d | baseline start none → 2023-01-16; baseline finish none → 2023-01-16 |
| 107 | **การปรับปรุงจากผลตอบรับ - 3rd** | 2022-11-28 → 2023-01-17 (+50d) | 2022-12-02 → 2023-01-23 (+52d) | 37d → 44d | baseline start none → 2023-01-17; baseline finish none → 2023-01-23 |
| 108 | พัฒนาส่วน Front End เพิ่มเติมจากผลการประเมินจากผู้ใช้ | 2022-11-28 → 2023-01-17 (+50d) | 2022-12-02 → 2023-01-23 (+52d) | 37d → 44d | baseline start none → 2023-01-17; baseline finish none → 2023-01-23 |
| 109 | พัฒนาส่วน Backend & API เพิ่มเติมจากผลการประเมินจากผู้ใช้ | 2022-11-28 → 2023-01-17 (+50d) | 2022-12-02 → 2023-01-23 (+52d) | 37d → 44d | baseline start none → 2023-01-17; baseline finish none → 2023-01-23 |
| 110 | ทดสอบ | 2022-11-28 → 2023-01-17 (+50d) | 2022-11-28 → 2023-01-17 (+50d) | 41.5d → 48.5d | baseline start none → 2023-01-17; baseline finish none → 2023-01-17 |
| 111 | **เอกสารบทที่ 4-6** | 2022-12-05 → 2023-01-24 (+50d) | 2022-12-13 → 2023-02-01 (+50d) |  | baseline start none → 2023-01-24; baseline finish none → 2023-02-01 |
| 112 | เขียนเอกสาร | 2022-12-05 → 2023-01-24 (+50d) | 2022-12-13 → 2023-02-01 (+50d) |  | baseline start none → 2023-01-24; baseline finish none → 2023-02-01 |
| 113 | ส่งให้อาจารย์ที่ปรึกษา และ แก้ไข | 2022-12-05 → 2023-01-24 (+50d) | 2022-12-13 → 2023-02-01 (+50d) |  | baseline start none → 2023-01-24; baseline finish none → 2023-02-01 |

## Version 4 (saved 2022-09-04, file ipuatsons-WBS.mpp)

Note of the change: add front end of login page

Last finish stays 2023-03-24. Complete tasks 18 → 17.

Changed:

| ID | Task | Start | Finish | Duration | Complete | Total float |
| --- | --- | --- | --- | --- | --- | --- |
| 18 | **Implementation - 1st** |  |  | 81d → 81d? | 22% → 21% |  |
| 35 | **Account & Login Page** |  |  |  | 50% → 36% |  |
| 38 | ทดสอบ | 2022-09-05 A → 2022-09-05 | 2022-09-05 A → 2022-09-05 |  | 100% → 0% | none → 82d |
| 59 | **Server** |  |  | 14d → 14d? |  |  |

## Version 5 (saved 2022-09-07, file ipuatsons.mpp)

Note of the change: JWT security add to Django

Last finish stays 2023-03-24. Complete tasks 17 → 18.

Changed:

| ID | Task | Start | Finish | Duration | Complete | Total float |
| --- | --- | --- | --- | --- | --- | --- |
| 1 | **Requirement Analysis** |  | 2022-08-09 A → 2022-08-09 |  | 100% → 88% |  |
| 5 | **Develop Preliminary Project Scope Statement** |  | 2022-08-09 A → 2022-08-09 |  | 100% → 79% | none → 0d |
| 6 | กำหนด Functional Requirements |  | 2022-08-09 A → 2022-08-09 |  | 100% → 90% | none → 0d |
| 7 | กำหนด Non Functional Requirements |  | 2022-08-09 A → 2022-08-09 |  | 100% → 70% | none → 0d |
| 8 | กำหนดระยะเวลาการทำงาน |  | 2022-08-05 A → 2022-08-05 |  | 100% → 75% | none → 2d |
| 9 | **Design Phase** |  |  |  | 1% → 55% |  |
| 10 | ออกแบบ UX/UI | 2022-08-10 A |  |  | 0% → 37% |  |
| 11 | วาด Use Case Diagram | 2022-08-10 A |  |  | 0% → 61% |  |
| 12 | ออกแบบ Database |  |  |  | 5% → 92% |  |
| 13 | ประมวลภาพรวมการออกแบบครั้งที่ 1 | 2022-08-10 A | 2022-08-10 A |  | 0% → 100% | 6.5d → none |
| 14 | วาด Object Diagram | 2022-08-10 A | 2022-08-10 A |  | 0% → 100% | 6d → none |
| 15 | วาด Sequence Diagram | 2022-08-10 A |  |  | 0% → 37% |  |
| 16 | ประมวลภาพรวมการออกแบบครั้งที่ 2 | 2022-08-10 A | 2022-08-10 A |  | 0% → 100% | 6.5d → none |
| 17 | Design Phase เสร็จสิ้น | 2022-08-09 A | 2022-08-09 A |  | 0% → 100% | 7d → none |
| 18 | **Implementation - 1st** |  |  |  | 21% → 20% |  |
| 19 | **Tools Study** |  |  |  | 90% → 75% |  |
| 20 | เรียนรู้เกี่ยวกับ Vuet js |  | 2022-08-23 A |  | 67% → 100% | 2d → none |
| 21 | เรียนรู้เกี่ยวกับ Django | 2022-08-23 A → 2022-08-24 A (+1d) | 2022-08-26 → 2022-08-29 A (+3d) |  | 75% → 100% | 134d → none |
| 22 | เรียนรู้เกี่ยวกับ MongoDB | 2022-08-26 A → 2022-08-30 A (+4d) | 2022-08-29 A → 2022-08-31 (+2d) |  | 100% → 25% | none → 131d |
| 24 | เรียนรู้เกี่ยวกับ Docker | 2022-08-19 A → 2022-08-22 A (+3d) | 2022-08-22 A → 2022-08-23 A (+1d) |  |  |  |
| 25 | เรียนรู้เกี่ยวกับ Nginx | 2022-08-22 A → 2022-08-24 A (+2d) | 2022-08-23 A → 2022-08-25 A (+2d) |  |  |  |
| 26 | เรียนรู้เกี่ยวกับ Kubernetes | 2022-08-23 A → 2022-08-26 A (+3d) | 2022-08-24 A → 2022-08-29 A (+5d) |  |  |  |
| 27 | เรียนรู้เกี่ยวกับ Microk8s, K3D, K3S | 2022-08-24 A → 2022-08-30 A (+6d) | 2022-08-29 A → 2022-09-02 (+4d) |  | 100% → 13% | none → 129d |
| 28 | เขียน Progress report #1 |  | 2022-08-26 A → 2022-08-22 A (-4d) |  |  |  |
| 30 | **Coding Plan** | 2022-08-31 A → 2022-08-30 A (-1d) | 2022-09-02 A → 2022-08-31 A (-2d) | 3d → 1d |  |  |
| 31 | กำหนด Directory ในการทำงาน | 2022-09-02 A → 2022-08-31 A (-2d) | 2022-09-02 A → 2022-08-31 A (-2d) |  |  |  |
| 32 | กำหนด Version ของ framework และ libary ที่ใช้ | 2022-09-02 A → 2022-08-31 A (-2d) | 2022-09-02 A → 2022-08-31 A (-2d) |  |  |  |
| 34 | สร้าง และ ตั้งค่า Github | 2022-09-02 A → 2022-08-30 A (-3d) | 2022-09-02 A → 2022-08-31 A (-2d) |  |  |  |
| 35 | **Account & Login Page** |  |  |  | 36% → 47% |  |
| 36 | พัฒนาส่วน Front End |  |  |  | 42% → 48% |  |
| 37 | พัฒนาส่วน Backend & API |  |  |  | 42% → 48% |  |
| 38 | ทดสอบ | 2022-09-05 A |  |  | 0% → 45% |  |

## Version 6 (saved 2022-09-21, file ipuatsons - Copy.mpp)

Note of the change: Merge branch 'main' of https://github.com/SuteeSaraphan/IPAuTSoNS

Last finish stays 2023-03-24. Complete tasks 18 → 23.

Added:

| ID | Task | Duration | Start | Finish |
| --- | --- | --- | --- | --- |
| 64 | Image processing Application | 20d | 2022-08-19 | 2022-09-15 |

Changed:

| ID | Task | Start | Finish | Duration | Complete | Total float | Predecessors |
| --- | --- | --- | --- | --- | --- | --- | --- |
| 18 | **Implementation - 1st** |  |  |  | 20% → 26% |  |  |
| 19 | **Tools Study** |  | 2022-08-30 → 2022-09-02 A (+3d) | 8d → 11d | 75% → 100% |  |  |
| 22 | เรียนรู้เกี่ยวกับ MongoDB |  | 2022-08-31 A |  | 25% → 100% | 131d → none |  |
| 27 | เรียนรู้เกี่ยวกับ Microk8s, K3D, K3S |  | 2022-09-02 A |  | 13% → 100% | 129d → none |  |
| 35 | **Account & Login Page** |  |  |  | 47% → 68% |  |  |
| 36 | พัฒนาส่วน Front End |  |  |  | 48% → 42% | 80d → 4d |  |
| 37 | พัฒนาส่วน Backend & API |  | 2022-09-07 A |  | 48% → 100% | 80d → none |  |
| 38 | ทดสอบ |  |  |  | 45% → 50% | 82d → 6d |  |
| 39 | เขียน Progress report #2 | 2022-09-05 A | 2022-09-09 A |  | 0% → 100% |  |  |
| 40 | progress report #2 | 2022-09-09 A | 2022-09-09 A |  | 0% → 100% |  |  |
| 41 | **Setting Page** | 2022-11-14 → 2022-09-14 A (-61d) | 2022-11-18 → 2022-09-22 (-57d) | 5d → 7d | 0% → 20% |  | 55 → 35 |
| 42 | พัฒนาส่วน Front End | 2022-11-14 → 2022-09-14 A (-61d) | 2022-11-14 → 2022-09-14 (-61d) |  | 0% → 23% | 63d → 6d |  |
| 43 | พัฒนาส่วน Backend & API | 2022-11-14 → 2022-09-14 A (-61d) | 2022-11-15 → 2022-09-15 (-61d) |  | 0% → 12% | 62d → 5d |  |
| 44 | ทดสอบ | 2022-11-14 → 2022-09-14 A (-61d) | 2022-11-14 → 2022-09-14 (-61d) |  | 0% → 47% | 63.5d → 6.5d |  |
| 45 | **Drive Page** | 2022-09-21 → 2022-09-23 (+2d) | 2022-10-04 → 2022-10-12 (+8d) | 10d → 14d | 0% → 10% |  | 49 → 41 |
| 46 | พัฒนาส่วน Front End | 2022-09-21 → 2022-09-23 (+2d) | 2022-09-27 → 2022-09-29 (+2d) |  |  |  |  |
| 47 | พัฒนาส่วน Backend & API | 2022-09-21 A | 2022-09-27 → 2022-09-28 (+1d) |  | 0% → 20% | 76d → 77d |  |
| 48 | ทดสอบ | 2022-09-21 → 2022-09-23 (+2d) | 2022-09-21 → 2022-09-23 (+2d) |  |  |  |  |
| 49 | **Feed Page** | 2022-09-12 → 2022-10-13 (+31d) | 2022-09-20 → 2022-11-01 (+42d) | 7d → 14d |  |  | 35 → 45 |
| 50 | พัฒนาส่วน Front End | 2022-09-12 → 2022-10-13 (+31d) | 2022-09-16 → 2022-10-19 (+33d) |  |  | 78d → 81d |  |
| 51 | พัฒนาส่วน Backend & API | 2022-09-12 → 2022-10-13 (+31d) | 2022-09-16 → 2022-10-19 (+33d) |  |  | 78d → 81d |  |
| 52 | ทดสอบ | 2022-09-12 → 2022-10-13 (+31d) | 2022-09-12 → 2022-10-13 (+31d) |  |  | 82.5d → 85.5d |  |

## Version 7 (saved 2022-10-09, file ipuatsons - Copy.mpp)

Note of the change: update file uploader and add new folder functions

Last finish stays 2023-03-24. Complete tasks 23 → 25.

Changed:

| ID | Task | Start | Finish | Complete |
| --- | --- | --- | --- | --- |
| 18 | **Implementation - 1st** |  |  | 26% → 29% |
| 45 | **Drive Page** |  |  | 10% → 34% |
| 49 | เขียน Progress report #3 | 2022-09-19 A | 2022-09-22 A | 0% → 100% |
| 50 | progress report #3 | 2022-09-23 A | 2022-09-23 A | 0% → 100% |

## Version 8 (saved 2022-10-19, file ipuatsons - Copy.mpp)

Note of the change: Update ipuatsons - Copy.mpp

Last finish stays 2023-03-24. Complete tasks 25 → 33.

Changed:

| ID | Task | Start | Finish | Complete | Total float |
| --- | --- | --- | --- | --- | --- |
| 1 | **Requirement Analysis** |  | 2022-08-09 A | 88% → 100% |  |
| 5 | **Develop Preliminary Project Scope Statement** |  | 2022-08-09 A | 79% → 100% | 0d → none |
| 6 | กำหนด Functional Requirements |  | 2022-08-09 A | 90% → 100% | 0d → none |
| 7 | กำหนด Non Functional Requirements |  | 2022-08-09 A | 70% → 100% | 0d → none |
| 8 | กำหนดระยะเวลาการทำงาน |  | 2022-08-05 A | 75% → 100% | 2d → none |
| 9 | **Design Phase** |  |  | 55% → 100% |  |
| 10 | ออกแบบ UX/UI |  | 2022-08-16 A | 37% → 100% | 2d → none |
| 11 | วาด Use Case Diagram |  | 2022-08-12 A | 61% → 100% | 4d → none |
| 12 | ออกแบบ Database |  | 2022-08-11 A | 92% → 100% | 5d → none |
| 15 | วาด Sequence Diagram |  | 2022-08-16 A | 37% → 100% | 2d → none |
| 18 | **Implementation - 1st** |  |  | 29% → 40% |  |
| 35 | **Account & Login Page** |  |  | 68% → 82% |  |
| 36 | พัฒนาส่วน Front End |  |  | 42% → 75% |  |
| 41 | **Setting Page** |  |  | 20% → 83% |  |
| 42 | พัฒนาส่วน Front End |  |  | 23% → 63% | 2d → 4d |
| 43 | พัฒนาส่วน Backend & API |  | 2022-09-15 A | 12% → 100% | 1d → none |
| 44 | ทดสอบ |  |  | 47% → 55% | 2.5d → 4.5d |
| 45 | **Drive Page** |  |  | 34% → 52% |  |
| 46 | พัฒนาส่วน Front End | 2022-09-23 A |  | 0% → 30% |  |
| 47 | พัฒนาส่วน Backend & API |  |  | 20% → 75% |  |
| 48 | ทดสอบ | 2022-09-23 A |  | 0% → 50% |  |
| 53 | เขียน Progress report #3 | 2022-09-19 A → 2022-09-19 | 2022-09-22 A → 2022-09-22 | 100% → 0% |  |
| 54 | progress report #3 | 2022-09-23 A → 2022-09-23 | 2022-09-23 A → 2022-09-23 | 100% → 0% |  |
| 59 | **Server** | 2022-09-05 A |  | 0% → 97% |  |
| 60 | ติดตั้ง OS สำหรับ Server และสร้าง VM | 2022-09-05 A | 2022-09-09 A | 0% → 100% | 109d → none |
| 61 | ตั้งค่า Network ของ Server | 2022-09-05 A | 2022-09-09 A | 0% → 100% | 109d → none |
| 62 | ติดตั้งระบบ Cluster Kubernetes (MicroK8S) | 2022-09-05 A |  | 0% → 75% |  |
| 63 | สร้างระบบ Dashboard | 2022-09-05 A |  | 0% → 75% |  |

## Version 9 (saved 2022-10-20, file CE65-12 Microsoft Project ครั้งที่ 4.mpp)

Note of the change: Update docs

Last finish stays 2023-03-24. Complete tasks 33 → 32.

Added:

| ID | Task | Duration | Start | Finish | Resources |
| --- | --- | --- | --- | --- | --- |
| 86 | พัฒนาส่วนการนำเข้า Model | 1d | 2023-01-02 | 2023-01-02 |  |
| 91 | พัฒนาส่วนระบบ Payment | 1d | 2023-01-04 | 2023-01-04 |  |
| 96 | พัฒนาส่วนการนำเข้า Model | 1d | 2023-01-04 | 2023-01-04 |  |
| 100 | ทดสอบการใช้งาน Model ของ Image processing application | 1d | 2023-01-02 | 2023-01-02 |  |
| 101 | ปรับปรุง Docker image | 1d | 2023-01-02 | 2023-01-02 |  |
| 119 | เขียนเอกสาร บทที่ 5 | 7d | 2023-01-24 | 2023-02-01 | Pasin; Sutee |
| 121 | **เตรียมการนำเสนอ** | 1d | 2023-01-23 | 2023-01-24 |  |
| 122 | จัดเตรียมเอกสารนำเสนอ | 1d | 2023-01-24 | 2023-01-24 |  |
| 123 | จัดทำ สไลด์สำหรับนำเสนอ | 1d | 2023-01-23 | 2023-01-24 |  |
| 124 | นำเสนอ | 1d | 2023-01-23 | 2023-01-24 |  |

Changed:

| ID | Task | Start | Finish | Complete | Total float | Other |
| --- | --- | --- | --- | --- | --- | --- |
| 18 | **Implementation - 1st** |  |  | 40% → 39% |  |  |
| 41 | **Setting Page** |  |  | 83% → 36% |  |  |
| 43 | พัฒนาส่วน Backend & API |  | 2022-09-15 A → 2022-09-15 | 100% → 25% | none → 3d |  |
| 44 | ทดสอบ |  |  | 55% → 25% |  |  |
| 117 | **เอกสารบทที่ 4-5** | 2023-01-24 → 2023-01-23 (-1d) |  |  | 37d → 0d | was named เอกสารบทที่ 4-6 |
| 118 | เขียนเอกสาร บทที่ 4 |  |  |  |  | was named เขียนเอกสาร |

## Version 10 (saved 2022-11-02, file ipuatsons - Copy.mpp)

Note of the change: Doc update

Last finish stays 2023-03-24. Complete tasks 32 → 37.

Changed:

| ID | Task | Start | Finish | Duration | Complete | Total float | Predecessors |
| --- | --- | --- | --- | --- | --- | --- | --- |
| 18 | **Implementation - 1st** |  |  |  | 39% → 59% |  |  |
| 41 | **Setting Page** |  |  |  | 36% → 54% |  |  |
| 42 | พัฒนาส่วน Front End |  |  |  | 63% → 75% |  |  |
| 43 | พัฒนาส่วน Backend & API |  |  |  | 25% → 50% |  |  |
| 45 | **Drive Page** |  |  |  | 52% → 64% |  |  |
| 47 | พัฒนาส่วน Backend & API |  | 2022-09-28 A |  | 75% → 100% | 33d → none |  |
| 49 | เขียน Progress report #3 | 2022-09-19 A | 2022-09-22 → 2022-09-19 A (-3d) | 4d → 1d | 0% → 100% |  |  |
| 50 | progress report #3 | 2022-09-23 A | 2022-09-23 A |  | 0% → 100% |  |  |
| 51 | **Application page** | 2022-10-25 A |  |  | 0% → 33% |  |  |
| 52 | พัฒนาส่วน Front End | 2022-10-25 A |  |  | 0% → 20% |  |  |
| 53 | พัฒนาส่วน Backend & API | 2022-10-25 A |  |  | 0% → 50% |  |  |
| 60 | Image processing Application | 2022-08-19 A | 2022-09-15 → 2022-08-31 (-15d) | 20d → 9d | 0% → 50% |  |  |
| 61 | เขียน Progress report #4 | 2022-10-17 A | 2022-10-20 → 2022-10-18 A (-2d) | 4d → 2d | 0% → 100% |  |  |
| 62 | progress report #4 - report chapter #1 | 2022-10-21 A | 2022-10-21 A |  | 0% → 100% |  |  |
| 63 | **1st Test Plan** |  |  |  |  |  | 35, 89, 45, 51, 41, 55 → 35, 45, 51, 41, 55 |

## Version 11 (saved 2022-11-23, file ipuatsons - Copy.mpp)

Note of the change: Update progress report

Last finish stays 2023-03-24. Complete tasks 37 → 40.

Changed:

| ID | Task | Start | Finish | Complete | Total float | Other |
| --- | --- | --- | --- | --- | --- | --- |
| 18 | **Implementation - 1st** |  |  | 59% → 67% |  |  |
| 41 | **Setting Page** |  |  | 54% → 68% |  |  |
| 43 | พัฒนาส่วน Backend & API |  |  | 50% → 75% |  |  |
| 45 | **Drive Page** |  |  | 64% → 74% |  |  |
| 46 | พัฒนาส่วน Front End |  |  | 30% → 50% |  |  |
| 51 | **Application page** |  |  | 33% → 39% |  |  |
| 52 | พัฒนาส่วน Front End |  |  | 20% → 30% | 29d → 14d |  |
| 54 | ทดสอบ | 2022-10-25 A |  | 0% → 25% | 33.5d → 18.5d |  |
| 60 | Image processing Application |  |  | 50% → 75% |  |  |
| 63 | **1st Test Plan** | 2022-11-21 A |  | 0% → 10% |  |  |
| 64 | ทดสอบการเชื่อมต่อกันระหว่าง Web Application และ Server | 2022-11-21 A |  | 0% → 25% |  |  |
| 73 | เขียน Progress report #5 | 2022-10-31 A | 2022-11-03 A | 0% → 100% |  |  |
| 74 | progress report #5 - report chapter #2 | 2022-11-04 A | 2022-11-04 A | 0% → 100% |  |  |
| 75 | progress report #6 - report chapter #3 | 2022-11-25 A | 2022-11-25 A | 0% → 100% |  | was named progress report #6 - report chapter #1 |

## Version 12 (saved 2023-01-17, file ipuatsons - Copy.mpp)

Note of the change: Update ipuatsons - Copy.mpp

Last finish 2023-03-24 → 2023-04-20 (+27d). Complete tasks 40 → 55.

Added:

| ID | Task | Duration | Start | Finish |
| --- | --- | --- | --- | --- |
| 84 | เขียน Progress report #1 | 1d | 2023-01-09 A | 2023-01-09 A |
| 85 | progress report #1 | 1d | 2023-01-20 A | 2023-01-20 A |
| 91 | เขียน Progress report #2 | 10d | 2023-01-23 | 2023-02-03 |
| 92 | progress report #2 | 1d? | 2023-02-03 | 2023-02-03 |
| 97 | เขียน Progress report #3 | 1d? | 2023-02-06 | 2023-02-06 |
| 98 | progress report #3 | 1d? | 2023-02-24 | 2023-02-24 |
| 104 | เขียน Progress report #4 | 1d? | 2023-02-27 | 2023-02-27 |
| 105 | progress report #4 | 1d? | 2023-03-24 | 2023-03-24 |
| 125 | เขียน Progress report #5 | 1d? | 2023-03-27 | 2023-03-27 |
| 126 | progress report #5 - full report draft | 1d? | 2023-04-05 | 2023-04-05 |
| 134 | สอบโครงการ 2 | 1d? | 2022-08-28 | 2022-08-28 |
| 135 | ส่งปริญญานิพนธ์ | 1d? | 2022-08-28 | 2022-08-28 |

Removed: 124 นำเสนอ

Changed:

| ID | Task | Start | Finish | Duration | Complete | Total float | Other |
| --- | --- | --- | --- | --- | --- | --- | --- |
| 18 | **Implementation - 1st** |  |  |  | 67% → 92% |  |  |
| 41 | **Setting Page** |  |  |  | 68% → 86% |  |  |
| 43 | พัฒนาส่วน Backend & API |  | 2022-09-15 A |  | 75% → 100% | 3d → none |  |
| 44 | ทดสอบ |  |  |  | 25% → 50% |  |  |
| 45 | **Drive Page** |  |  |  | 74% → 87% |  |  |
| 46 | พัฒนาส่วน Front End |  |  |  | 50% → 75% |  |  |
| 48 | ทดสอบ |  |  |  | 50% → 75% |  |  |
| 51 | **Application page** |  |  |  | 39% → 49% |  |  |
| 52 | พัฒนาส่วน Front End |  |  |  | 30% → 50% | 14d → 44d |  |
| 55 | **Server** |  |  |  | 97% → 100% |  |  |
| 58 | ติดตั้งระบบ Cluster Kubernetes (MicroK8S) |  | 2022-09-05 A |  | 75% → 100% | 54.5d → none |  |
| 59 | สร้างระบบ Dashboard |  | 2022-09-05 A | 1d? → 1d | 75% → 100% |  |  |
| 60 | Image processing Application |  | 2022-08-31 A |  | 75% → 100% |  |  |
| 63 | **1st Test Plan** |  | 2022-11-23 A |  | 10% → 100% |  |  |
| 64 | ทดสอบการเชื่อมต่อกันระหว่าง Web Application และ Server |  | 2022-11-22 A |  | 25% → 100% | 16d → none |  |
| 65 | ประมวลผลการทดสอบ | 2022-11-21 A | 2022-11-23 A |  | 0% → 100% | 15d → none |  |
| 66 | **Mock Demo - 1st** | 2022-11-24 A | 2022-12-02 A |  | 0% → 100% | 15d → none |  |
| 67 | ทดสอบการกับกลุ่มผู้ใช้กลุ่มหนึง | 2022-11-24 A | 2022-12-02 A |  | 0% → 100% | 15d → none |  |
| 68 | ประเมินความพึงพอใจ | 2022-11-24 A | 2022-11-24 A |  | 0% → 100% | 21d → none |  |
| 69 | **การปรับปรุงจากผลตอบรับ - 1st** | 2022-12-05 A | 2022-12-09 A |  | 0% → 100% | 15d → none |  |
| 70 | พัฒนาส่วน Front End เพิ่มเติมจากผลการประเมินจากผู้ใช้ | 2022-12-05 A | 2022-12-09 A |  | 0% → 100% | 15d → none |  |
| 71 | พัฒนาส่วน Backend & API เพิ่มเติมจากผลการประเมินจากผู้ใช้ | 2022-12-05 A | 2022-12-09 A |  | 0% → 100% | 15d → none |  |
| 72 | ทดสอบ | 2022-12-05 A | 2022-12-05 A |  | 0% → 100% | 19.5d → none |  |
| 76 | ส่งเล่มรายงานและไฟล์รายงานสำหรับสอบโครงการ 1 | 2022-12-09 A | 2022-12-09 A |  | 0% → 100% | 75d → none |  |
| 77 | สอบโครงการ 1 | 2022-12-16 A | 2022-12-16 A |  | 0% → 100% |  |  |
| 78 | **Implementation - 2nd** | 2023-01-02 A |  | 60d → 60d? | 0% → 4% |  |  |
| 79 | **Application Page - model processing** | 2023-01-02 → 2023-01-09 (+7d) | 2023-01-03 → 2023-02-06 (+34d) | 2d → 20.5d? | 0% → 50% | 0d → none |  |
| 80 | พัฒนาส่วน Front End | 2023-01-02 → 2023-01-09 A (+7d) | 2023-01-02 → 2023-01-09 (+7d) |  | 0% → 75% | 1d → -4d |  |
| 81 | พัฒนาส่วน Backend & API | 2023-01-02 → 2023-01-09 A (+7d) | 2023-01-03 → 2023-01-10 (+7d) |  | 0% → 25% | 0d → -5d |  |
| 83 | ทดสอบ | 2023-01-02 → 2023-01-30 (+28d) | 2023-01-02 → 2023-01-30 (+28d) |  |  | 1.5d → 58.5d | constraint none → start no earlier than 2023-01-30 |
| 86 | **Market Place Page** | 2023-01-04 → 2023-02-06 (+33d) | 2023-01-05 → 2023-02-07 (+33d) | 2d → 2d? |  | 0d → none |  |
| 87 | พัฒนาส่วน Front End | 2023-01-04 → 2023-02-06 (+33d) | 2023-01-04 → 2023-02-06 (+33d) |  |  | 1d → -22d |  |
| 88 | พัฒนาส่วน Backend & API | 2023-01-04 → 2023-02-06 (+33d) | 2023-01-05 → 2023-02-07 (+33d) |  |  | 0d → -23d |  |
| 90 | ทดสอบ | 2023-01-04 → 2023-02-06 (+33d) | 2023-01-04 → 2023-02-06 (+33d) |  |  | 1.5d → -21.5d |  |
| 93 | **Feed Page** | 2022-10-13 → 2023-02-27 (+137d) | 2022-11-01 → 2023-03-16 (+135d) | 14d → 14d? |  |  |  |
| 94 | พัฒนาส่วน Front End | 2022-10-13 → 2023-02-27 (+137d) | 2022-10-19 → 2023-03-03 (+135d) |  |  | 112d → 34d |  |
| 95 | พัฒนาส่วน Backend & API | 2022-10-13 → 2023-02-27 (+137d) | 2022-10-19 → 2023-03-03 (+135d) |  |  | 112d → 34d |  |
| 96 | ทดสอบ | 2022-10-13 → 2023-02-27 (+137d) | 2022-10-13 → 2023-02-27 (+137d) |  |  | 116.5d → 38.5d |  |
| 99 | **Model Upload Page** |  | 2023-01-05 → 2023-03-24 (+78d) | 2d → 58d? |  |  | was named Model Uplaod Page |
| 100 | พัฒนาส่วน Front End | 2023-01-04 → 2023-02-06 (+33d) | 2023-01-04 → 2023-02-07 (+34d) |  |  | 1d → -22.5d |  |
| 101 | พัฒนาส่วน Backend & API | 2023-01-04 → 2023-02-06 (+33d) | 2023-01-05 → 2023-02-08 (+34d) |  |  | 0d → -23.5d |  |
| 103 | ทดสอบ | 2023-01-04 → 2023-02-06 (+33d) | 2023-01-04 → 2023-02-06 (+33d) |  |  | 1.5d → -22d |  |
| 106 | **Server** | 2023-01-02 A |  |  | 0% → 7% | 0d → 3d |  |
| 107 | พัฒนา Performance ของ Server | 2023-01-02 A |  |  | 0% → 25% |  |  |
| 111 | **Mock Demo - 2nd** | 2023-01-06 → 2023-03-27 (+80d) | 2023-01-06 → 2023-03-27 (+80d) |  |  | 0d → -56d |  |
| 112 | ทดสอบการกับกลุ่มผู้ใช้กลุ่มหนึง | 2023-01-06 → 2023-03-27 (+80d) | 2023-01-06 → 2023-03-27 (+80d) |  |  | 0d → -56d |  |
| 113 | ประเมินความพึงพอใจ | 2023-01-06 → 2023-03-27 (+80d) | 2023-01-06 → 2023-03-27 (+80d) |  |  | 0d → -56d |  |
| 114 | **การปรับปรุงจากผลตอบรับ - 2st** | 2023-01-09 → 2023-03-28 (+78d) | 2023-01-13 → 2023-04-03 (+80d) |  |  | 0d → -56d |  |
| 115 | พัฒนาส่วน Front End เพิ่มเติมจากผลการประเมินจากผู้ใช้ | 2023-01-09 → 2023-03-28 (+78d) | 2023-01-13 → 2023-04-03 (+80d) |  |  | 0d → -56d |  |
| 116 | พัฒนาส่วน Backend & API เพิ่มเติมจากผลการประเมินจากผู้ใช้ | 2023-01-09 → 2023-03-28 (+78d) | 2023-01-13 → 2023-04-03 (+80d) |  |  | 0d → -56d |  |
| 117 | ทดสอบ | 2023-01-09 → 2023-03-28 (+78d) | 2023-01-09 → 2023-03-28 (+78d) |  |  | 4.5d → -51.5d |  |
| 118 | **Mock Demo - 3rd** | 2023-01-16 → 2023-04-04 (+78d) | 2023-01-16 → 2023-04-04 (+78d) |  |  | 0d → -56d |  |
| 119 | ทดสอบการกับกลุ่มผู้ใช้กลุ่มหนึง | 2023-01-16 → 2023-04-04 (+78d) | 2023-01-16 → 2023-04-04 (+78d) |  |  | 0d → -56d |  |
| 120 | ประเมินความพึงพอใจ | 2023-01-16 → 2023-04-04 (+78d) | 2023-01-16 → 2023-04-04 (+78d) |  |  | 0d → -56d |  |
| 121 | **การปรับปรุงจากผลตอบรับ - 3rd** | 2023-01-17 → 2023-03-27 (+69d) | 2023-01-23 → 2023-04-11 (+78d) | 5d → 12d? |  | 0d → -49d |  |
| 122 | พัฒนาส่วน Front End เพิ่มเติมจากผลการประเมินจากผู้ใช้ | 2023-01-17 → 2023-04-05 (+78d) | 2023-01-23 → 2023-04-11 (+78d) |  |  | 0d → -56d |  |
| 123 | พัฒนาส่วน Backend & API เพิ่มเติมจากผลการประเมินจากผู้ใช้ | 2023-01-17 → 2023-04-05 (+78d) | 2023-01-23 → 2023-04-11 (+78d) |  |  | 0d → -56d |  |
| 124 | ทดสอบ | 2023-01-17 → 2023-04-05 (+78d) | 2023-01-17 → 2023-04-05 (+78d) |  |  | 4.5d → -51.5d |  |
| 127 | **เอกสารบทที่ 4-5** |  | 2023-02-01 → 2023-04-20 (+78d) | 7d → 63d |  |  |  |
| 128 | เขียนเอกสาร บทที่ 4 | 2023-01-24 → 2023-04-12 (+78d) | 2023-02-01 → 2023-04-20 (+78d) |  |  | 37d → 0d |  |
| 129 | เขียนเอกสาร บทที่ 5 | 2023-01-24 → 2023-04-12 (+78d) | 2023-02-01 → 2023-04-20 (+78d) |  |  | 37d → 0d |  |
| 130 | ส่งให้อาจารย์ที่ปรึกษา และ แก้ไข | 2023-01-24 → 2023-04-12 (+78d) | 2023-02-01 → 2023-04-20 (+78d) |  |  | 37d → 0d |  |

## Version 13 (saved 2023-01-31, file ipuatsons - Copy.mpp)

Note of the change: add many thing

Last finish stays 2023-04-20. Complete tasks 55 → 56.

Changed:

| ID | Task | Start | Finish | Complete |
| --- | --- | --- | --- | --- |
| 78 | **Implementation - 2nd** |  |  | 4% → 15% |
| 79 | **Application Page - model processing** |  |  | 50% → 59% |
| 81 | พัฒนาส่วน Backend & API |  |  | 25% → 50% |
| 82 | พัฒนาส่วนการนำเข้า Model | 2023-01-02 A |  | 0% → 10% |
| 86 | **Market Place Page** |  |  | 0% → 65% |
| 87 | พัฒนาส่วน Front End | 2023-02-06 A |  | 0% → 15% |
| 91 | เขียน Progress report #2 | 2023-01-23 A | 2023-02-03 A | 0% → 100% |

## Version 14 (saved 2023-02-21, file CE65-12 Microsoft Project ครั้งที่ 3.mpp)

Note of the change: miniupdate

Last finish stays 2023-04-20. Complete tasks 56 → 66.

Changed:

| ID | Task | Start | Finish | Duration | Complete | Total float |
| --- | --- | --- | --- | --- | --- | --- |
| 18 | **Implementation - 1st** |  | 2022-12-09 A |  | 92% → 100% |  |
| 35 | **Account & Login Page** |  |  |  | 82% → 100% |  |
| 36 | พัฒนาส่วน Front End |  | 2022-09-07 A |  | 75% → 100% | 4d → none |
| 38 | ทดสอบ |  | 2022-09-05 A |  | 50% → 100% | 6d → none |
| 41 | **Setting Page** |  |  |  | 86% → 100% |  |
| 42 | พัฒนาส่วน Front End |  | 2022-09-14 A |  | 75% → 100% | 4d → none |
| 44 | ทดสอบ |  | 2022-09-14 A |  | 50% → 100% | 4.5d → none |
| 45 | **Drive Page** |  |  |  | 87% → 100% |  |
| 46 | พัฒนาส่วน Front End |  | 2022-09-29 A |  | 75% → 100% | 3d → none |
| 48 | ทดสอบ |  | 2022-09-23 A |  | 75% → 100% | 7.5d → none |
| 51 | **Application page** |  |  |  | 49% → 100% |  |
| 52 | พัฒนาส่วน Front End |  | 2022-10-31 A |  | 50% → 100% | 44d → none |
| 53 | พัฒนาส่วน Backend & API |  | 2022-10-31 A |  | 50% → 100% | 44d → none |
| 54 | ทดสอบ |  | 2022-10-25 A |  | 25% → 100% | 48.5d → none |
| 78 | **Implementation - 2nd** |  |  |  | 15% → 24% |  |
| 79 | **Application Page - model processing** |  |  |  | 59% → 65% |  |
| 82 | พัฒนาส่วนการนำเข้า Model |  |  |  | 10% → 50% |  |
| 86 | **Market Place Page** |  |  |  | 65% → 87% |  |
| 87 | พัฒนาส่วน Front End |  |  |  | 15% → 75% |  |
| 88 | พัฒนาส่วน Backend & API | 2023-02-06 A |  |  | 0% → 75% |  |
| 89 | พัฒนาส่วนระบบ Payment | 2023-01-04 A |  |  | 0% → 25% |  |
| 92 | progress report #2 | 2023-02-03 A | 2023-02-03 A | 1d? → 1d | 0% → 100% |  |
| 93 | **Feed Page** |  |  |  | 0% → 40% |  |
| 94 | พัฒนาส่วน Front End | 2023-02-27 A |  |  | 0% → 75% |  |
| 95 | พัฒนาส่วน Backend & API | 2023-02-27 A |  |  | 0% → 25% |  |

## Version 15 (saved 2023-03-19, file ipuatsons - Copy.mpp)

Note of the change: change frontend folder name for understanding

Last finish stays 2023-04-20. Complete tasks 66 → 70.

Changed:

| ID | Task | Start | Finish | Duration | Complete |
| --- | --- | --- | --- | --- | --- |
| 78 | **Implementation - 2nd** |  |  |  | 24% → 46% |
| 86 | **Market Place Page** |  |  |  | 87% → 89% |
| 89 | พัฒนาส่วนระบบ Payment |  |  |  | 25% → 50% |
| 93 | **Feed Page** |  |  |  | 40% → 66% |
| 95 | พัฒนาส่วน Backend & API |  |  |  | 25% → 50% |
| 97 | เขียน Progress report #3 | 2023-02-06 A | 2023-02-06 A | 1d? → 1d | 0% → 100% |
| 98 | progress report #3 | 2023-02-24 A | 2023-02-24 A | 1d? → 1d | 0% → 100% |
| 99 | **Model Upload Page** | 2023-01-04 A |  | 58d? → 58d | 0% → 73% |
| 100 | พัฒนาส่วน Front End | 2023-02-06 A |  |  | 0% → 75% |
| 101 | พัฒนาส่วน Backend & API | 2023-02-06 A |  |  | 0% → 75% |
| 102 | พัฒนาส่วนการนำเข้า Model | 2023-01-04 A |  |  | 0% → 50% |
| 104 | เขียน Progress report #4 | 2023-02-27 A | 2023-02-27 A | 1d? → 1d | 0% → 100% |
| 105 | progress report #4 | 2023-03-24 A | 2023-03-24 A | 1d? → 1d | 0% → 100% |
| 106 | **Server** |  |  |  | 7% → 64% |
| 107 | พัฒนา Performance ของ Server |  |  |  | 25% → 75% |
| 108 | ทดสอบการใช้งาน Model ของ Image processing application | 2023-01-02 A |  |  | 0% → 75% |
| 109 | ปรับปรุง Docker image | 2023-01-02 A |  |  | 0% → 75% |
| 127 | **เอกสารบทที่ 4-5** | 2023-01-23 A |  |  | 0% → 46% |
| 128 | เขียนเอกสาร บทที่ 4 | 2023-04-12 A |  |  | 0% → 75% |
| 129 | เขียนเอกสาร บทที่ 5 | 2023-04-12 A |  |  | 0% → 75% |

## Version 16 (saved 2023-03-22, file ipuatsons - Copy.mpp)

Note of the change: update doc

Last finish stays 2023-04-20.

Changed:

| ID | Task | Start | Complete |
| --- | --- | --- | --- |
| 78 | **Implementation - 2nd** |  | 46% → 47% |
| 79 | **Application Page - model processing** |  | 65% → 77% |
| 81 | พัฒนาส่วน Backend & API |  | 50% → 75% |
| 82 | พัฒนาส่วนการนำเข้า Model |  | 50% → 65% |
| 83 | ทดสอบ | 2023-01-30 A | 0% → 20% |

## Version 17 (saved 2023-03-23, file ipuatsons - Copy.mpp)

Note of the change: add document and gant chart report

Last finish stays 2023-04-20. Complete tasks 70 → 71.

Changed:

| ID | Task | Start | Finish | Complete | Total float |
| --- | --- | --- | --- | --- | --- |
| 78 | **Implementation - 2nd** |  |  | 47% → 59% |  |
| 79 | **Application Page - model processing** |  |  | 77% → 83% |  |
| 82 | พัฒนาส่วนการนำเข้า Model |  |  | 65% → 90% |  |
| 83 | ทดสอบ |  |  | 20% → 50% |  |
| 86 | **Market Place Page** |  |  | 89% → 90% |  |
| 90 | ทดสอบ | 2023-02-06 A |  | 0% → 40% | -21.5d → 34.5d |
| 93 | **Feed Page** |  |  | 66% → 67% |  |
| 96 | ทดสอบ | 2023-02-27 A |  | 0% → 20% |  |
| 99 | **Model Upload Page** |  |  | 73% → 77% |  |
| 103 | ทดสอบ | 2023-02-06 A |  | 0% → 50% | -22d → 34d |
| 106 | **Server** |  |  | 64% → 71% | 3d → 59d |
| 110 | ทดสอบ | 2023-01-02 A |  | 0% → 50% | 3.5d → 59.5d |
| 111 | **Mock Demo - 2nd** | 2023-03-27 A |  | 0% → 50% | -56d → 0d |
| 112 | ทดสอบการกับกลุ่มผู้ใช้กลุ่มหนึง | 2023-03-27 A |  | 0% → 50% | -56d → 0d |
| 113 | ประเมินความพึงพอใจ | 2023-03-27 A |  | 0% → 50% | -56d → 0d |
| 114 | **การปรับปรุงจากผลตอบรับ - 2st** | 2023-03-28 A |  | 0% → 50% | -56d → 0d |
| 115 | พัฒนาส่วน Front End เพิ่มเติมจากผลการประเมินจากผู้ใช้ | 2023-03-28 A |  | 0% → 48% |  |
| 116 | พัฒนาส่วน Backend & API เพิ่มเติมจากผลการประเมินจากผู้ใช้ | 2023-03-28 A |  | 0% → 48% |  |
| 117 | ทดสอบ | 2023-03-28 A | 2023-03-28 A | 0% → 100% | -51.5d → none |
| 127 | **เอกสารบทที่ 4-5** |  |  | 46% → 61% |  |
| 130 | ส่งให้อาจารย์ที่ปรึกษา และ แก้ไข | 2023-04-12 A |  | 0% → 50% |  |

## Version 18 (saved 2023-04-02, file ipuatsons - Copy.mpp)

Note of the change: update doc

Last finish stays 2023-04-20. Complete tasks 71 → 81.

Changed:

| ID | Task | Start | Finish | Complete | Total float |
| --- | --- | --- | --- | --- | --- |
| 78 | **Implementation - 2nd** |  |  | 59% → 72% |  |
| 86 | **Market Place Page** |  | 2023-02-07 A | 90% → 100% |  |
| 87 | พัฒนาส่วน Front End |  | 2023-02-06 A | 75% → 100% | 34d → none |
| 88 | พัฒนาส่วน Backend & API |  | 2023-02-07 A | 75% → 100% | 33d → none |
| 89 | พัฒนาส่วนระบบ Payment |  | 2023-01-04 A | 50% → 100% |  |
| 90 | ทดสอบ |  | 2023-02-06 A | 40% → 100% | 34.5d → none |
| 93 | **Feed Page** |  |  | 67% → 100% |  |
| 94 | พัฒนาส่วน Front End |  | 2023-03-03 A | 75% → 100% | 34d → none |
| 95 | พัฒนาส่วน Backend & API |  | 2023-03-03 A | 50% → 100% | 34d → none |
| 96 | ทดสอบ |  | 2023-02-27 A | 20% → 100% | 38.5d → none |
| 111 | **Mock Demo - 2nd** |  | 2023-03-27 A | 50% → 100% | 0d → none |
| 112 | ทดสอบการกับกลุ่มผู้ใช้กลุ่มหนึง |  | 2023-03-27 A | 50% → 100% | 0d → none |
| 113 | ประเมินความพึงพอใจ |  | 2023-03-27 A | 50% → 100% | 0d → none |
| 114 | **การปรับปรุงจากผลตอบรับ - 2st** |  |  | 50% → 49% |  |
| 115 | พัฒนาส่วน Front End เพิ่มเติมจากผลการประเมินจากผู้ใช้ |  |  | 48% → 50% |  |
| 116 | พัฒนาส่วน Backend & API เพิ่มเติมจากผลการประเมินจากผู้ใช้ |  |  | 48% → 50% |  |
| 117 | ทดสอบ |  | 2023-03-28 A → 2023-03-28 | 100% → 30% | none → -51.5d |
| 127 | **เอกสารบทที่ 4-5** |  |  | 61% → 85% |  |
| 128 | เขียนเอกสาร บทที่ 4 |  |  | 75% → 84% |  |
| 129 | เขียนเอกสาร บทที่ 5 |  |  | 75% → 84% |  |
| 130 | ส่งให้อาจารย์ที่ปรึกษา และ แก้ไข |  |  | 50% → 84% |  |
| 131 | **เตรียมการนำเสนอ** | 2023-01-23 A | 2023-01-24 A | 0% → 100% | 0d → none |
| 132 | จัดเตรียมเอกสารนำเสนอ | 2023-01-24 A | 2023-01-24 A | 0% → 100% |  |
| 133 | จัดทำ สไลด์สำหรับนำเสนอ | 2023-01-23 A | 2023-01-24 A | 0% → 100% |  |

## Version 19 (saved 2023-04-04, file ipuatsons - Copy.mpp)

Note of the change: Progress report 5 add

Last finish stays 2023-04-20. Complete tasks 81 → 87.

Changed:

| ID | Task | Start | Finish | Duration | Complete | Total float |
| --- | --- | --- | --- | --- | --- | --- |
| 78 | **Implementation - 2nd** |  |  |  | 72% → 77% |  |
| 99 | **Model Upload Page** |  |  |  | 77% → 85% |  |
| 100 | พัฒนาส่วน Front End |  | 2023-02-07 A |  | 75% → 100% | 52.5d → none |
| 101 | พัฒนาส่วน Backend & API |  |  |  | 75% → 50% |  |
| 102 | พัฒนาส่วนการนำเข้า Model |  | 2023-01-04 A |  | 50% → 100% |  |
| 103 | ทดสอบ |  | 2023-02-06 A |  | 50% → 100% | 53d → none |
| 114 | **การปรับปรุงจากผลตอบรับ - 2st** |  |  |  | 49% → 50% |  |
| 115 | พัฒนาส่วน Front End เพิ่มเติมจากผลการประเมินจากผู้ใช้ |  |  |  | 50% → 48% | -56d → 0d |
| 116 | พัฒนาส่วน Backend & API เพิ่มเติมจากผลการประเมินจากผู้ใช้ |  |  |  | 50% → 48% | -56d → 0d |
| 117 | ทดสอบ |  | 2023-03-28 A |  | 30% → 100% | -51.5d → none |
| 118 | **Mock Demo - 3rd** | 2023-04-04 A |  |  | 0% → 50% | -56d → 0d |
| 119 | ทดสอบการกับกลุ่มผู้ใช้กลุ่มหนึง | 2023-04-04 A |  |  | 0% → 50% | -56d → 0d |
| 120 | ประเมินความพึงพอใจ | 2023-04-04 A |  |  | 0% → 50% | -56d → 0d |
| 121 | **การปรับปรุงจากผลตอบรับ - 3rd** | 2023-03-27 A |  | 12d? → 12d | 0% → 16% | -49d → -4d |
| 125 | เขียน Progress report #5 | 2023-03-27 A | 2023-03-27 A | 1d? → 1d | 0% → 100% |  |
| 126 | progress report #5 - full report draft | 2023-04-05 A | 2023-04-05 A | 1d? → 1d | 0% → 100% |  |
| 127 | **เอกสารบทที่ 4-5** |  |  |  | 85% → 90% |  |
| 128 | เขียนเอกสาร บทที่ 4 |  |  |  | 84% → 89% |  |
| 129 | เขียนเอกสาร บทที่ 5 |  |  |  | 84% → 89% |  |
| 130 | ส่งให้อาจารย์ที่ปรึกษา และ แก้ไข |  |  |  | 84% → 89% |  |
